How a schedule from MS Project changed from version to version. A marks actual dates.

## Version 1 (saved 2019-10-15, file MCP标准版V1.2迭代工作量评估(年前版本20191015).mpp)

| ID | WBS | Task | Duration | Start | Finish | Predecessors | Complete | Total float |
| --- | --- | --- | --- | --- | --- | --- | --- | --- |
| 1 | 1 | **MCP标准版V1.2迭代** | 73.5d | 2019-10-08 09:00 A | 2020-01-17 14:00 |  |  | 0d |
| 2 | 1.1 | **ERP接入标准接口** | 19.5d | 2019-10-08 09:00 A | 2019-11-01 14:00 |  | 4% | 54d |
| 3 | 1.1.1 | **后端技术研究** | 1.5d | 2019-10-08 09:00 A | 2019-10-09 14:00 A |  | 100% |  |
| 4 |  | Mule ESB技术研究 | 1.5d | 2019-10-08 09:00 A | 2019-10-09 14:00 A |  | 100% |  |
| 5 | 1.1.2 | **后端设计** | 3d | 2019-10-09 14:00 | 2019-10-12 14:00 |  |  | 0d |
| 6 |  | Mule ESB数据转换设计 | 3d | 2019-10-09 14:00 | 2019-10-12 14:00 | 4 |  | 0d |
| 7 |  | MCP标准接口详细设计 | 3d | 2019-10-09 14:00 | 2019-10-12 14:00 | 4 |  | 69d |
| 8 | 1.1.3 | **后端Mule ESB开发** | 5d | 2019-10-12 14:00 | 2019-10-18 14:00 |  |  | 0d |
| 9 |  | 数据转换公共方法的封装（ERP接口数据格式转成MCP接口数据格式） | 4d | 2019-10-12 14:00 | 2019-10-17 14:00 | 6 |  | 62d |
| 10 |  | 供应商商品数据转换 | 1d | 2019-10-17 14:00 | 2019-10-18 14:00 | 9 |  | 62d |
| 11 |  | 采购单数据转换 | 1d | 2019-10-12 14:00 | 2019-10-14 14:00 | 6 |  | 62d |
| 12 |  | 采购单确认数据转换 | 1d | 2019-10-14 14:00 | 2019-10-15 14:00 | 11 |  | 62d |
| 13 |  | 供货单数据转换 | 1d | 2019-10-15 14:00 | 2019-10-16 14:00 | 12 |  | 62d |
| 14 |  | 退货申请单数据转换 | 1d | 2019-10-08 09:00 | 2019-10-09 09:00 |  |  | 72.5d |
| 15 |  | 退货申请单确认数据转换 | 1d | 2019-10-08 09:00 | 2019-10-09 09:00 |  |  | 72.5d |
| 16 |  | 退货单数据转换 | 1d | 2019-10-12 14:00 | 2019-10-14 14:00 | 6 |  | 0d |
| 17 |  | 退货单确认数据转换 | 1d | 2019-10-14 14:00 | 2019-10-15 14:00 | 16 |  | 0d |
| 18 | 1.1.4 | **后端标准接口开发** | 5d | 2019-10-15 14:00 | 2019-10-22 14:00 |  |  | 0d |
| 19 |  | 供应商商品信息上传，商品入库（如果是骨科耗材商品，如果平台没有维护，则要同步到平台骨科耗进行管理材） | 2d | 2019-10-18 14:00 | 2019-10-22 14:00 | 10 |  | 62d |
| 20 |  | 采购单下发接口 | 2d | 2019-10-16 14:00 | 2019-10-18 14:00 | 13 |  | 62d |
| 21 |  | 采购单确认上传接口 | 2d | 2019-10-18 14:00 | 2019-10-22 14:00 | 20 |  | 62d |
| 22 |  | 供货单上传接口（未提交到医院运行供应商进行修改） | 2d | 2019-10-15 14:00 | 2019-10-17 14:00 | 17 |  | 0d |
| 23 |  | 退货申请单下发接口 | 2d | 2019-10-08 09:00 | 2019-10-10 09:00 |  |  | 71.5d |
| 24 |  | 退货申请单确认上传接口 | 1d | 2019-10-08 09:00 | 2019-10-09 09:00 |  |  | 72.5d |
| 25 |  | 退货单下发接口 | 2d | 2019-10-17 14:00 | 2019-10-21 14:00 | 22 |  | 0d |
| 26 |  | 退货单确认上传接口 | 1d | 2019-10-21 14:00 | 2019-10-22 14:00 | 25 |  | 0d |
| 27 |  | 研发人员自测 | 2d | 2019-10-22 14:00 | 2019-10-24 14:00 | 26 |  | 0d |
| 28 | 1.1.6 | **外部系统联调** | 6d | 2019-10-24 14:00 | 2019-11-01 14:00 |  |  | 41.5d |
| 29 |  | 供应商商品信息上传，商品入库（如果是骨科耗材商品，如果平台没有维护，则要同步到平台骨科耗进行管理材） | 1d | 2019-10-24 14:00 | 2019-10-25 14:00 | 27 |  | 41.5d |
| 30 |  | 采购单下发接口 | 1d | 2019-10-25 14:00 | 2019-10-28 14:00 | 29 |  | 41.5d |
| 31 |  | 采购单确认上传接口 | 1d | 2019-10-28 14:00 | 2019-10-29 14:00 | 30 |  | 41.5d |
| 32 |  | 供货单上传接口 | 1d | 2019-10-29 14:00 | 2019-10-30 14:00 | 31 |  | 41.5d |
| 33 |  | 退货申请单下发接口 | 1d | 2019-10-08 09:00 | 2019-10-09 09:00 |  |  | 72.5d |
| 34 |  | 退货申请单确认上传接口 | 1d | 2019-10-08 09:00 | 2019-10-09 09:00 |  |  | 72.5d |
| 35 |  | 退货单下发接口 | 1d | 2019-10-30 14:00 | 2019-10-31 14:00 | 32 |  | 41.5d |
| 36 |  | 退货单确认上传接口 | 1d | 2019-10-31 14:00 | 2019-11-01 14:00 | 35 |  | 41.5d |
| 37 | 1.2 | **一期功能优化** | 57.5d | 2019-10-23 14:00 | 2020-01-14 09:00 |  |  | 3.5d |
| 38 | 1.2.1 | **组件集成** | 11d | 2019-10-23 14:00 | 2019-11-07 14:00 |  |  | 9d |
| 39 |  | 工作流（Activiti）集成 | 2d | 2019-11-01 14:00 | 2019-11-05 14:00 | 432 |  | 50d |
| 40 |  | 工作流（Activiti）审批服务方法封装 | 1d | 2019-11-05 14:00 | 2019-11-06 14:00 | 39 |  | 50d |
| 41 |  | 工作流（Activiti）审批历史记录查询方法封装 | 1d | 2019-11-06 14:00 | 2019-11-07 14:00 | 40 |  | 50d |
| 42 |  | ireport报表工具集成 | 2d | 2019-11-05 14:00 | 2019-11-07 14:00 | 39 |  | 50d |
| 43 |  | ireport报表工具公共方法封装 | 2d | 2019-11-06 14:00 | 2019-11-08 14:00 | 40 |  | 49d |
| 44 |  | Excel批量导入/导出公共方法封装 | 2d | 2019-10-23 14:00 | 2019-10-25 14:00 | 409 |  | 9d |
| 45 | 1.2.2 | **机构管理** | 23.5d | 2019-10-25 14:00 | 2019-11-28 09:00 |  |  | 9d |
| 46 | 1.2.2.1 | **厂商管理** | 12d | 2019-10-25 14:00 | 2019-11-12 14:00 |  |  | 9d |
| 47 | 1.2.2.1.1 | **后端设计** | 7d | 2019-10-25 14:00 | 2019-11-05 14:00 |  |  | 9d |
| 48 |  | 表结构设计（现有的厂商信息表改为厂商信息待审批表，新增厂商信息表、厂商信息审批历史记录表） | 2d | 2019-10-25 14:00 | 2019-10-29 14:00 | 44 |  | 9d |
| 49 |  | 接口详细设计 | 2d | 2019-11-01 14:00 | 2019-11-05 14:00 | 36 |  | 41.5d |
| 50 | 1.2.2.1.2 | **后端开发** | 5d | 2019-11-01 14:00 | 2019-11-08 14:00 |  |  | 43.5d |
| 51 |  | 原厂商信息管理代码改造 | 2d | 2019-11-01 14:00 | 2019-11-05 14:00 | 432 |  | 43.5d |
| 52 |  | 待审批记录审批接口，审批时往审批历史记录表插入记录，审批通过时通过新增或更新厂商信息表 | 2d | 2019-11-05 14:00 | 2019-11-07 14:00 | 49 |  | 43.5d |
| 53 |  | 变更信息详情接口（变更前后记录对比） | 1d | 2019-11-07 14:00 | 2019-11-08 14:00 | 52 |  | 43.5d |
| 54 |  | 审批流详情接口（审批的所有过程记录） | 1d | 2019-11-05 14:00 | 2019-11-06 14:00 | 49 |  | 41.5d |
| 55 |  | 批量导入接口 | 1d | 2019-11-06 14:00 | 2019-11-07 14:00 | 54 |  | 41.5d |
| 56 |  | 批量导出接口（支持查询条件） | 0.5d | 2019-11-07 14:00 | 2019-11-08 09:00 | 55 |  | 41.5d |
| 57 |  | 启用/停用接口 | 0.5d | 2019-11-08 09:00 | 2019-11-08 14:00 | 56 |  | 41.5d |
| 58 | 1.2.2.1.3 | **前端开发** | 1.5d | 2019-11-01 14:00 | 2019-11-05 09:00 |  |  | 52.5d |
| 59 |  | 变更记录审批界面开发 | 0.5d | 2019-11-01 14:00 | 2019-11-04 09:00 | 36 |  | 52.5d |
| 60 |  | 变更信息详情界面开发 | 0.5d | 2019-11-04 09:00 | 2019-11-04 14:00 | 59 |  | 52.5d |
| 61 |  | 审批流详情界面开发 | 0.5d | 2019-11-04 14:00 | 2019-11-05 09:00 | 60 |  | 52.5d |
| 62 | 1.2.2.1.4 | **前后端联调** | 2d | 2019-11-08 14:00 | 2019-11-12 14:00 |  |  | 41.5d |
| 63 |  | 待审批记录审批接口，审批时往审批历史记录表插入记录，审批通过时通过新增或更新厂商信息表 | 0.5d | 2019-11-08 14:00 | 2019-11-11 09:00 | 53 |  | 43.5d |
| 64 |  | 变更信息详情接口（变更前后记录对比） | 0.5d | 2019-11-11 09:00 | 2019-11-11 14:00 | 63 |  | 43.5d |
| 65 |  | 审批流详情接口（审批的所有过程记录） | 0.5d | 2019-11-08 14:00 | 2019-11-11 09:00 | 57 |  | 41.5d |
| 66 |  | 批量导入接口 | 0.5d | 2019-11-11 09:00 | 2019-11-11 14:00 | 65 |  | 41.5d |
| 67 |  | 批量导出接口（支持查询条件） | 0.5d | 2019-11-11 14:00 | 2019-11-12 09:00 | 66 |  | 41.5d |
| 68 |  | 启用/停用接口 | 0.5d | 2019-11-12 09:00 | 2019-11-12 14:00 | 67 |  | 41.5d |
| 69 | 1.2.2.2 | **医院管理** | 14d | 2019-10-29 14:00 | 2019-11-18 14:00 |  |  | 9d |
| 70 | 1.2.2.2.1 | **后端设计** | 6d | 2019-10-29 14:00 | 2019-11-06 14:00 |  |  | 9d |

| ID | WBS | Task | Duration | Start | Finish | Predecessors | Total float |
| --- | --- | --- | --- | --- | --- | --- | --- |
| 71 |  | 表结构设计（现有的医院信息表改为医院信息待审批表，新增医院信息表和医院信息审批历史记录表） | 2d | 2019-10-29 14:00 | 2019-10-31 14:00 | 48 | 9d |
| 72 |  | 接口详细设计 | 4d | 2019-10-31 14:00 | 2019-11-06 14:00 | 71 | 9d |
| 73 | 1.2.2.2.2 | **后端开发** | 8d | 2019-11-05 14:00 | 2019-11-15 14:00 |  | 42.5d |
| 74 |  | 原医院信息管理代码改造 | 2d | 2019-11-05 14:00 | 2019-11-07 14:00 | 51 | 43.5d |
| 75 |  | 待审批记录审批接口，审批时往审批历史记录表插入记录，审批通过时通过新增或更新医院信息表 | 2d | 2019-11-11 14:00 | 2019-11-13 14:00 | 64 | 43.5d |
| 76 |  | 变更信息详情接口（变更前后记录对比） | 1d | 2019-11-13 14:00 | 2019-11-14 14:00 | 75 | 43.5d |
| 77 |  | 审批流详情接口（审批的所有过程记录） | 1d | 2019-11-12 14:00 | 2019-11-13 14:00 | 68 | 41.5d |
| 78 |  | 批量导入接口 | 1d | 2019-11-13 14:00 | 2019-11-14 14:00 | 77 | 41.5d |
| 79 |  | 批量导出接口（支持查询条件） | 0.5d | 2019-11-14 14:00 | 2019-11-15 09:00 | 78 | 41.5d |
| 80 |  | 启用/停用接口 | 0.5d | 2019-11-15 09:00 | 2019-11-15 14:00 | 79 | 41.5d |
| 81 | 1.2.2.2.3 | **前端开发** | 1.5d | 2019-11-01 14:00 | 2019-11-05 09:00 |  | 52.5d |
| 82 |  | 变更记录审批界面开发 | 0.5d | 2019-11-01 14:00 | 2019-11-04 09:00 | 36 | 52.5d |
| 83 |  | 变更信息详情界面开发 | 0.5d | 2019-11-04 09:00 | 2019-11-04 14:00 | 82 | 52.5d |
| 84 |  | 审批流详情界面开发 | 0.5d | 2019-11-04 14:00 | 2019-11-05 09:00 | 83 | 52.5d |
| 85 | 1.2.2.2.4 | **前后端联调** | 2d | 2019-11-14 14:00 | 2019-11-18 14:00 |  | 42.5d |
| 86 |  | 待审批记录审批接口，审批时往审批历史记录表插入记录，审批通过时通过新增或更新医院信息表 | 0.5d | 2019-11-14 14:00 | 2019-11-15 09:00 | 76 | 43.5d |
| 87 |  | 变更信息详情接口（变更前后记录对比） | 0.5d | 2019-11-15 09:00 | 2019-11-15 14:00 | 86 | 43.5d |
| 88 |  | 审批流详情接口（审批的所有过程记录） | 0.5d | 2019-11-15 14:00 | 2019-11-18 09:00 | 87 | 43.5d |
| 89 |  | 批量导入接口 | 0.5d | 2019-11-15 14:00 | 2019-11-18 09:00 | 80 | 41.5d |
| 90 |  | 批量导出接口（支持查询条件） | 0.5d | 2019-11-18 09:00 | 2019-11-18 14:00 | 89 | 43d |
| 91 |  | 启用/停用接口 | 0.5d | 2019-11-18 09:00 | 2019-11-18 14:00 | 89 | 41.5d |
| 92 | 1.2.2.3 | **供应商管理** | 7.5d | 2019-11-06 14:00 | 2019-11-18 09:00 |  | 3d |
| 93 | 1.2.2.3.1 | **后端设计** | 3d | 2019-11-06 14:00 | 2019-11-11 14:00 |  | 9d |
| 94 |  | 表结构设计（现有的供应商信息表改为供应商信息待审批表，新增供应商信息表和供应商信息审批历史记录表） | 2d | 2019-11-06 14:00 | 2019-11-08 14:00 | 72 | 9d |
| 95 |  | 接口详细设计 | 2d | 2019-11-07 14:00 | 2019-11-11 14:00 | 74 | 43.5d |
| 96 | 1.2.2.3.2 | **后端开发** | 4d | 2019-11-11 14:00 | 2019-11-15 14:00 |  | 0d |
| 97 |  | 原供应商信息管理代码改造 | 1d | 2019-11-11 14:00 | 2019-11-12 14:00 | 95 | 43.5d |
| 98 |  | 待审批记录审批接口，审批时往审批历史记录表插入记录，审批通过时通过新增或更新供应商信息表 | 2d | 2019-11-12 14:00 | 2019-11-14 14:00 | 97 | 43.5d |
| 99 |  | 变更信息详情接口（变更前后记录对比） | 1d | 2019-11-14 14:00 | 2019-11-15 14:00 | 98 | 44d |
| 100 |  | 审批流详情接口（审批的所有过程记录） | 1d | 2019-11-11 14:00 | 2019-11-12 14:00 | 436 | 0d |
| 101 |  | 批量导入接口 | 1d | 2019-11-12 14:00 | 2019-11-13 14:00 | 100 | 0d |
| 102 |  | 批量导出接口（支持查询条件） | 0.5d | 2019-11-13 14:00 | 2019-11-14 09:00 | 101 | 0d |
| 103 |  | 启用/停用接口 | 0.5d | 2019-11-14 09:00 | 2019-11-14 14:00 | 102 | 0d |
| 104 | 1.2.2.3.3 | **前端开发** | 1.5d | 2019-11-12 14:00 | 2019-11-14 09:00 |  | 45.5d |
| 105 |  | 变更记录审批界面开发 | 0.5d | 2019-11-12 14:00 | 2019-11-13 09:00 | 68 | 45.5d |
| 106 |  | 变更信息详情界面开发 | 0.5d | 2019-11-13 09:00 | 2019-11-13 14:00 | 105 | 45.5d |
| 107 |  | 审批流详情界面开发 | 0.5d | 2019-11-13 14:00 | 2019-11-14 09:00 | 106 | 45.5d |
| 108 | 1.2.2.3.4 | **前后端联调** | 1.5d | 2019-11-14 14:00 | 2019-11-18 09:00 |  | 0d |
| 109 |  | 待审批记录审批接口，审批时往审批历史记录表插入记录，审批通过时通过新增或更新供应商信息表 | 0.5d | 2019-11-14 14:00 | 2019-11-15 09:00 | 98 | 43.5d |
| 110 |  | 变更信息详情接口（变更前后记录对比） | 0.5d | 2019-11-15 09:00 | 2019-11-15 14:00 | 109 | 43.5d |
| 111 |  | 审批流详情接口（审批的所有过程记录） | 0.5d | 2019-11-15 14:00 | 2019-11-18 09:00 | 110 | 43.5d |
| 112 |  | 批量导入接口 | 0.5d | 2019-11-14 14:00 | 2019-11-15 09:00 | 103 | 0d |
| 113 |  | 批量导出接口（支持查询条件） | 0.5d | 2019-11-15 09:00 | 2019-11-15 14:00 | 112 | 0d |
| 114 |  | 启用/停用接口 | 0.5d | 2019-11-15 14:00 | 2019-11-18 09:00 | 113 | 0d |
| 115 |  | 研发人员自测 | 3d | 2019-11-18 09:00 | 2019-11-21 09:00 | 114 | 0d |
| 116 | 1.2.2.5 | **测试介入** | 5d | 2019-11-21 09:00 | 2019-11-28 09:00 |  | 24d |
| 117 |  | 封闭测试 | 2d | 2019-11-21 09:00 | 2019-11-25 09:00 | 115 | 24d |
| 118 |  | bug修复回归测试 | 3d | 2019-11-25 09:00 | 2019-11-28 09:00 | 117 | 24d |
| 119 | 1.2.2.6 | **代理商管理** | 1d | 2019-10-08 09:00 | 2019-10-09 09:00 |  | 72.5d |
| 120 | 1.2.2.6.1 | **后端设计** | 0.5d | 2019-10-08 09:00 | 2019-10-08 14:00 |  | 73d |
| 121 |  | 接口详细设计 | 0.5d | 2019-10-08 09:00 | 2019-10-08 14:00 |  | 72.5d |
| 122 | 1.2.2.6.2 | **后端开发** | 1d | 2019-10-08 09:00 | 2019-10-09 09:00 |  | 72.5d |
| 123 |  | 批量导入接口 | 1d | 2019-10-08 09:00 | 2019-10-09 09:00 |  | 72d |
| 124 |  | 批量导出接口（支持查询条件） | 1d | 2019-10-08 09:00 | 2019-10-09 09:00 |  | 72d |
| 125 | 1.2.2.6.3 | **前后端联调** | 0.5d | 2019-10-08 09:00 | 2019-10-08 14:00 |  | 73d |
| 126 |  | 批量导入接口 | 0.5d | 2019-10-08 09:00 | 2019-10-08 14:00 |  | 72.5d |
| 127 |  | 批量导出接口（支持查询条件） | 0.5d | 2019-10-08 09:00 | 2019-10-08 14:00 |  | 72.5d |
| 128 | 1.2.3 | **商品管理** | 33d | 2019-11-08 14:00 | 2019-12-25 14:00 |  | 8.5d |
| 129 | 1.2.3.1 | **平台商品** | 21d | 2019-11-08 14:00 | 2019-12-09 14:00 |  | 8.5d |
| 130 | 1.2.3.1.1 | **药品管理** | 16d | 2019-11-08 14:00 | 2019-12-02 14:00 |  | 8.5d |
| 131 | 1.2.3.1.1.1 | **后端设计** | 8d | 2019-11-08 14:00 | 2019-11-20 14:00 |  | 9d |
| 132 |  | 表结构设计（现有的平台药品信息表改为平台药品信息待审批表，新增平台药品信息表和平台药品审批历史记录表） | 2d | 2019-11-08 14:00 | 2019-11-12 14:00 | 94 | 9d |
| 133 |  | 接口详细设计 | 6d | 2019-11-12 14:00 | 2019-11-20 14:00 | 132 | 9d |
| 134 | 1.2.3.1.1.2 | **后端开发** | 5d | 2019-11-21 09:00 | 2019-11-28 09:00 |  | 0d |
| 135 |  | 原平台药品信息管理代码改造 | 2d | 2019-11-21 09:00 | 2019-11-25 09:00 | 115 | 14.5d |
| 136 |  | 待审批记录审批接口，审批时往审批历史记录表插入记录，审批通过时通过新增或更新平台药品信息表 | 2d | 2019-11-25 09:00 | 2019-11-27 09:00 | 135 | 14.5d |
| 137 |  | 变更信息详情接口 | 1d | 2019-11-27 09:00 | 2019-11-28 09:00 | 136 | 14.5d |
| 138 |  | 审批流详情接口（审批的所有过程记录） | 1d | 2019-11-21 09:00 | 2019-11-22 09:00 | 115 | 0d |
| 139 |  | 药品商品信息批量导入接口 | 2d | 2019-11-22 09:00 | 2019-11-26 09:00 | 138 | 0d |
| 140 |  | 药品商品信息批量导出功能（支持条件查询） | 1d | 2019-11-26 09:00 | 2019-11-27 09:00 | 139 | 0d |

| ID | WBS | Task | Duration | Start | Finish | Predecessors | Total float |
| --- | --- | --- | --- | --- | --- | --- | --- |
| 141 |  | 启用/停用接口 | 0.5d | 2019-11-27 09:00 | 2019-11-27 14:00 | 140 | 0d |
| 142 | 1.2.3.1.1.3 | **前端开发** | 1.5d | 2019-11-18 14:00 | 2019-11-20 09:00 |  | 41.5d |
| 143 |  | 变更记录审批界面开发 | 0.5d | 2019-11-18 14:00 | 2019-11-19 09:00 | 91 | 40.5d |
| 144 |  | 变更信息详情界面开发 | 0.5d | 2019-11-19 09:00 | 2019-11-19 14:00 | 143 | 40.5d |
| 145 |  | 审批流详情界面开发 | 0.5d | 2019-11-19 14:00 | 2019-11-20 09:00 | 144 | 40.5d |
| 146 | 1.2.3.1.1.4 | **前后端联调** | 3d | 2019-11-27 14:00 | 2019-12-02 14:00 |  | 0d |
| 147 |  | 待审批记录审批接口，审批时往审批历史记录表插入记录，审批通过时通过新增或更新平台药品信息表 | 0.5d | 2019-11-27 14:00 | 2019-11-28 09:00 | 141 | 0d |
| 148 |  | 变更信息详情接口 | 0.5d | 2019-11-28 09:00 | 2019-11-28 14:00 | 147 | 0d |
| 149 |  | 审批流详情接口（审批的所有过程记录） | 0.5d | 2019-11-28 14:00 | 2019-11-29 09:00 | 148 | 0d |
| 150 |  | 药品商品信息批量导入接口 | 0.5d | 2019-11-29 09:00 | 2019-11-29 14:00 | 149 | 0d |
| 151 |  | 药品商品信息批量导出功能（支持条件查询） | 0.5d | 2019-11-29 14:00 | 2019-12-02 09:00 | 150 | 0d |
| 152 |  | 启用/停用接口 | 0.5d | 2019-12-02 09:00 | 2019-12-02 14:00 | 151 | 0d |
| 153 | 1.2.3.1.2 | **试剂管理** | 12d | 2019-11-20 14:00 | 2019-12-06 14:00 |  | 9d |
| 154 | 1.2.3.1.2.1 | **后端设计** | 8d | 2019-11-20 14:00 | 2019-12-02 14:00 |  | 9d |
| 155 |  | 表结构设计（现有的平台试剂信息表改为平台试剂信息待审批表，新增平台试剂信息表和平台试剂审批历史记录表） | 2d | 2019-11-20 14:00 | 2019-11-22 14:00 | 133 | 9d |
| 156 |  | 接口详细设计 | 6d | 2019-11-22 14:00 | 2019-12-02 14:00 | 155 | 9d |
| 157 | 1.2.3.1.2.2 | **后端开发** | 8.5d | 2019-11-21 09:00 | 2019-12-03 14:00 |  | 24.5d |
| 158 |  | 原平台试剂信息管理代码改造 | 2d | 2019-11-21 09:00 | 2019-11-25 09:00 | 115 | 26d |
| 159 |  | 待审批记录审批接口，审批时往审批历史记录表插入记录，审批通过时通过新增或更新平台试剂信息表 | 2d | 2019-11-25 09:00 | 2019-11-27 09:00 | 158 | 26d |
| 160 |  | 变更信息详情接口 | 1d | 2019-11-27 09:00 | 2019-11-28 09:00 | 159 | 26d |
| 161 |  | 审批流详情接口（审批的所有过程记录） | 1d | 2019-11-28 09:00 | 2019-11-29 09:00 | 160 | 26d |
| 162 |  | 试剂商品信息批量导入接口 | 2d | 2019-11-28 09:00 | 2019-12-02 09:00 | 118 | 20d |
| 163 |  | 试剂商品信息批量导出功能（支持条件查询） | 1d | 2019-12-02 09:00 | 2019-12-03 09:00 | 162 | 20d |
| 164 |  | 启用/停用接口 | 0.5d | 2019-12-03 09:00 | 2019-12-03 14:00 | 163 | 20d |
| 165 | 1.2.3.1.2.3 | **前端开发** | 1.5d | 2019-11-28 09:00 | 2019-11-29 14:00 |  | 34d |
| 166 |  | 变更记录审批界面开发 | 0.5d | 2019-11-28 09:00 | 2019-11-28 14:00 | 118 | 33d |
| 167 |  | 变更信息详情界面开发 | 0.5d | 2019-11-28 14:00 | 2019-11-29 09:00 | 166 | 33d |
| 168 |  | 审批流详情界面开发 | 0.5d | 2019-11-29 09:00 | 2019-11-29 14:00 | 167 | 33d |
| 169 | 1.2.3.1.2.4 | **前后端联调** | 3d | 2019-12-03 14:00 | 2019-12-06 14:00 |  | 24d |
| 170 |  | 待审批记录审批接口，审批时往审批历史记录表插入记录，审批通过时通过新增或更新平台试剂信息表 | 0.5d | 2019-12-03 14:00 | 2019-12-04 09:00 | 164 | 20d |
| 171 |  | 变更信息详情接口 | 0.5d | 2019-12-04 09:00 | 2019-12-04 14:00 | 170 | 20d |
| 172 |  | 审批流详情接口（审批的所有过程记录） | 0.5d | 2019-12-04 14:00 | 2019-12-05 09:00 | 171 | 20d |
| 173 |  | 试剂商品信息批量导入接口 | 0.5d | 2019-12-05 09:00 | 2019-12-05 14:00 | 172 | 20d |
| 174 |  | 试剂商品信息批量导出功能（支持条件查询） | 0.5d | 2019-12-05 14:00 | 2019-12-06 09:00 | 173 | 20d |
| 175 |  | 启用/停用接口 | 0.5d | 2019-12-06 09:00 | 2019-12-06 14:00 | 174 | 20d |
| 176 | 1.2.3.1.3 | **耗材管理** | 7.5d | 2019-11-28 09:00 | 2019-12-09 14:00 |  | 2.5d |
| 177 | 1.2.3.1.3.1 | **后端设计** | 3.5d | 2019-11-29 09:00 | 2019-12-04 14:00 |  | 10.5d |
| 178 |  | 表结构设计（现有的平台耗材信息表改为平台耗材信息待审批表，新增平台耗材信息表和平台耗材审批历史记录表） | 2d | 2019-12-02 14:00 | 2019-12-04 14:00 | 156 | 9d |
| 179 |  | 接口详细设计 | 3d | 2019-11-29 09:00 | 2019-12-04 09:00 | 161 | 26d |
| 180 | 1.2.3.1.3.2 | **后端开发** | 6d | 2019-11-28 09:00 | 2019-12-06 09:00 |  | 2.5d |
| 181 |  | 原平台耗材信息管理代码改造 | 2d | 2019-11-28 09:00 | 2019-12-02 09:00 | 137 | 14.5d |
| 182 |  | 待审批记录审批接口，审批时往审批历史记录表插入记录，审批通过时通过新增或更新平台试剂信息表 | 2d | 2019-12-02 09:00 | 2019-12-04 09:00 | 181 | 14.5d |
| 183 |  | 变更信息详情接口 | 1d | 2019-12-02 14:00 | 2019-12-03 14:00 | 152 | 0d |
| 184 |  | 审批流详情接口（审批的所有过程记录） | 1d | 2019-12-03 14:00 | 2019-12-04 14:00 | 183 | 0d |
| 185 |  | 耗材商品信息批量导入接口 | 2d | 2019-12-04 09:00 | 2019-12-06 09:00 | 179 | 26d |
| 186 |  | 耗材商品信息批量导出功能（支持条件查询） | 1d | 2019-12-04 14:00 | 2019-12-05 14:00 | 184 | 0d |
| 187 |  | 启用/停用接口 | 0.5d | 2019-12-05 14:00 | 2019-12-06 09:00 | 186 | 0d |
| 188 | 1.2.3.1.3.3 | **前端开发** | 1.5d | 2019-12-02 14:00 | 2019-12-04 09:00 |  | 31.5d |
| 189 |  | 变更记录审批界面开发 | 0.5d | 2019-12-02 14:00 | 2019-12-03 09:00 | 152 | 30.5d |
| 190 |  | 变更信息详情界面开发 | 0.5d | 2019-12-03 09:00 | 2019-12-03 14:00 | 189 | 30.5d |
| 191 |  | 审批流详情界面开发 | 0.5d | 2019-12-03 14:00 | 2019-12-04 09:00 | 190 | 30.5d |
| 192 | 1.2.3.1.3.4 | **前后端联调** | 1.5d | 2019-12-06 09:00 | 2019-12-09 14:00 |  | 0d |
| 193 |  | 待审批记录审批接口，审批时往审批历史记录表插入记录，审批通过时通过新增或更新平台试剂信息表 | 0.5d | 2019-12-06 09:00 | 2019-12-06 14:00 | 185 | 26d |
| 194 |  | 变更信息详情接口 | 0.5d | 2019-12-06 14:00 | 2019-12-09 09:00 | 193 | 26d |
| 195 |  | 审批流详情接口（审批的所有过程记录） | 0.5d | 2019-12-09 09:00 | 2019-12-09 14:00 | 194 | 26d |
| 196 |  | 耗材商品信息批量导入接口 | 0.5d | 2019-12-06 09:00 | 2019-12-06 14:00 | 187 | 0d |
| 197 |  | 耗材商品信息批量导出功能（支持条件查询） | 0.5d | 2019-12-06 14:00 | 2019-12-09 09:00 | 196 | 0d |
| 198 |  | 启用/停用接口 | 0.5d | 2019-12-09 09:00 | 2019-12-09 14:00 | 197 | 0d |
| 199 | 1.2.3.2 | **供应商商品** | 7.5d | 2019-12-04 09:00 | 2019-12-13 14:00 |  | 3.5d |
| 200 | 1.2.3.2.1 | **药品管理** | 6.5d | 2019-12-04 09:00 | 2019-12-12 14:00 |  | 9.5d |
| 201 | 1.2.3.2.1.1 | **后端设计** | 1.5d | 2019-12-04 09:00 | 2019-12-05 14:00 |  | 9.5d |
| 202 |  | 表结构设计调整（供应商药品信息主表添加“阳光采购平台编码”字段） | 1d | 2019-12-04 14:00 | 2019-12-05 14:00 | 178 | 9d |
| 203 |  | 接口详细设计 | 1d | 2019-12-04 09:00 | 2019-12-05 09:00 | 182 | 14.5d |
| 204 | 1.2.3.2.1.2 | **后端开发** | 4.5d | 2019-12-05 09:00 | 2019-12-11 14:00 |  | 15.5d |
| 205 |  | “商品属性”字段改为非必填 | 0.5d | 2019-12-05 09:00 | 2019-12-05 14:00 | 203 | 14.5d |
| 206 |  | 商品名称允许重复，批准文号/注册证号不允许重复 | 0.5d | 2019-12-05 14:00 | 2019-12-06 09:00 | 205 | 14.5d |
| 207 |  | 药品信息批量导入接口 | 2d | 2019-12-06 14:00 | 2019-12-10 14:00 | 175 | 20d |
| 208 |  | 药品信息批量导出接口（支持条件查询） | 1d | 2019-12-10 14:00 | 2019-12-11 14:00 | 207 | 20d |
| 209 | 1.2.3.2.1.3 | **前后端联调** | 1d | 2019-12-11 14:00 | 2019-12-12 14:00 |  | 24d |
| 210 |  | 药品信息批量导入接口 | 0.5d | 2019-12-11 14:00 | 2019-12-12 09:00 | 208 | 20d |

| ID | WBS | Task | Duration | Start | Finish | Predecessors | Total float |
| --- | --- | --- | --- | --- | --- | --- | --- |
| 211 |  | 药品信息批量导出接口（支持条件查询） | 0.5d | 2019-12-12 09:00 | 2019-12-12 14:00 | 210 | 20d |
| 212 | 1.2.3.2.2 | **试剂管理** | 6d | 2019-12-05 14:00 | 2019-12-13 14:00 |  | 9d |
| 213 | 1.2.3.2.2.1 | **后端设计** | 1.5d | 2019-12-05 14:00 | 2019-12-09 09:00 |  | 9d |
| 214 |  | 表结构设计调整（供应商药品信息主表添加“阳光采购平台编码”字段） | 1d | 2019-12-05 14:00 | 2019-12-06 14:00 | 202 | 9d |
| 215 |  | 接口详细设计 | 1d | 2019-12-06 09:00 | 2019-12-09 09:00 | 206 | 15.5d |
| 216 | 1.2.3.2.2.2 | **后端开发** | 4d | 2019-12-09 14:00 | 2019-12-13 14:00 |  | 24d |
| 217 |  | “商品属性”字段改为非必填 | 0.5d | 2019-12-09 14:00 | 2019-12-10 09:00 | 198 | 24d |
| 218 |  | 商品名称允许重复，批准文号/注册证号不允许重复 | 0.5d | 2019-12-10 09:00 | 2019-12-10 14:00 | 217 | 24d |
| 219 |  | 试剂信息批量导入接口 | 2d | 2019-12-10 14:00 | 2019-12-12 14:00 | 218 | 24d |
| 220 |  | 试剂信息批量导出接口（支持条件查询） | 1d | 2019-12-12 14:00 | 2019-12-13 14:00 | 219 | 24d |
| 221 | 1.2.3.2.2.3 | **前后端联调** | 1d | 2019-12-12 14:00 | 2019-12-13 14:00 |  | 24d |
| 222 |  | “药品本位码”字段改为“全球唯一码” | 0.5d | 2019-12-12 14:00 | 2019-12-13 09:00 | 211 | 24d |
| 223 |  | 试剂信息批量导入接口 | 0.5d | 2019-12-13 09:00 | 2019-12-13 14:00 | 222 | 24d |
| 224 |  | 试剂信息批量导出接口（支持条件查询） | 0.5d | 2019-12-13 09:00 | 2019-12-13 14:00 | 222 | 24d |
| 225 | 1.2.3.2.3 | **耗材管理** | 5d | 2019-12-06 14:00 | 2019-12-13 14:00 |  | 1d |
| 226 | 1.2.3.2.3.1 | **后端设计** | 1.5d | 2019-12-06 14:00 | 2019-12-10 09:00 |  | 9d |
| 227 |  | 表结构设计调整（供应商药品信息主表添加“阳光采购平台编码”字段） | 1d | 2019-12-06 14:00 | 2019-12-09 14:00 | 214 | 9d |
| 228 |  | 接口详细设计 | 1d | 2019-12-09 09:00 | 2019-12-10 09:00 | 215 | 15.5d |
| 229 | 1.2.3.2.3.2 | **后端开发** | 3d | 2019-12-09 14:00 | 2019-12-12 14:00 |  | 0d |
| 230 |  | “商品属性”字段改为非必填 | 0.5d | 2019-12-09 14:00 | 2019-12-10 09:00 | 195 | 27d |
| 231 |  | 商品名称允许重复，批准文号/注册证号不允许重复 | 0.5d | 2019-12-10 09:00 | 2019-12-10 14:00 | 230 | 27d |
| 232 |  | 耗材信息批量导入接口 | 2d | 2019-12-09 14:00 | 2019-12-11 14:00 | 198 | 0d |
| 233 |  | 耗材信息批量导出接口（支持条件查询） | 1d | 2019-12-11 14:00 | 2019-12-12 14:00 | 232 | 0d |
| 234 | 1.2.3.2.3.3 | **前后端联调** | 1d | 2019-12-12 14:00 | 2019-12-13 14:00 |  | 0d |
| 235 |  | 耗材信息批量导入接口 | 0.5d | 2019-12-12 14:00 | 2019-12-13 09:00 | 233 | 0d |
| 236 |  | 耗材信息批量导出接口（支持条件查询） | 0.5d | 2019-12-13 09:00 | 2019-12-13 14:00 | 235 | 0d |
| 237 | 1.2.3.2.4 | **供应目录下发** | 2d | 2019-12-10 09:00 | 2019-12-12 09:00 |  | 15.5d |
| 238 | 1.2.3.2.4.1 | **后端开发** | 1d | 2019-12-10 09:00 | 2019-12-11 09:00 |  | 15.5d |
| 239 |  | 供应商商品目录下发转换任务（从MCP业务表到临时表），增加“阳光采购平台编码”字段下发 | 1d | 2019-12-10 09:00 | 2019-12-11 09:00 | 228 | 15.5d |
| 240 | 1.2.3.2.4.2 | **外部系统联调** | 1d | 2019-12-11 09:00 | 2019-12-12 09:00 |  | 15.5d |
| 241 |  | 供应商商品目录下发（ETL数据同步，从MCP临时表到DSC） | 1d | 2019-12-11 09:00 | 2019-12-12 09:00 | 239 | 15.5d |
| 242 |  | 研发人员自测 | 3d | 2019-12-13 14:00 | 2019-12-18 14:00 | 236 | 0d |
| 243 | 1.2.3.4 | **测试介入** | 5d | 2019-12-18 14:00 | 2019-12-25 14:00 |  | 16d |
| 244 |  | 封闭测试 | 2d | 2019-12-18 14:00 | 2019-12-20 14:00 | 242 | 16d |
| 245 |  | bug修复回归测试 | 3d | 2019-12-20 14:00 | 2019-12-25 14:00 | 244 | 16d |
| 246 | 1.2.4 | **统一编码** | 19.5d | 2019-12-09 14:00 | 2020-01-07 09:00 |  | 7d |
| 247 | 1.2.4.1 | **供应商商品匹对管理** | 13d | 2019-12-09 14:00 | 2019-12-26 14:00 |  | 9d |
| 248 | 1.2.4.1.1 | **后端设计** | 4.5d | 2019-12-09 14:00 | 2019-12-16 09:00 |  | 9d |
| 249 |  | 表结构设计（原有的商品匹对表改为商品匹对待审批表，新增商品匹对表和商品匹对历史记录表） | 2d | 2019-12-09 14:00 | 2019-12-11 14:00 | 227 | 9d |
| 250 |  | 接口详细设计 | 2d | 2019-12-12 09:00 | 2019-12-16 09:00 | 241 | 15.5d |
| 251 | 1.2.4.1.2 | **后端开发** | 7.5d | 2019-12-16 09:00 | 2019-12-25 14:00 |  | 15d |
| 252 |  | 原供应商商品匹对管理代码改造 | 2d | 2019-12-16 09:00 | 2019-12-18 09:00 | 250 | 15.5d |
| 253 |  | 待审批记录审批接口，审批时往审批历史记录表插入记录，审批通过时通过新增或更新商品匹对信息表 | 2d | 2019-12-18 14:00 | 2019-12-20 14:00 | 242 | 15.5d |
| 254 |  | 变更信息详情接口 | 1d | 2019-12-20 14:00 | 2019-12-23 14:00 | 253 | 15.5d |
| 255 |  | 审批流详情接口（审批的所有过程记录） | 1d | 2019-12-23 14:00 | 2019-12-24 14:00 | 254 | 15.5d |
| 256 |  | 匹对任务改造：处于“未匹对”状态的记录要可以自动重复匹对（例如先有供应商商品，后面才补充平台商品的，可以重新自动匹对，不需要生成新的匹对记录，只需要变更匹对状态） | 2d | 2019-12-18 14:00 | 2019-12-20 14:00 | 242 | 15d |
| 257 |  | 手动匹对接口改造：已匹对但是审批不通过的记录可重新进行手动匹对，审批不通过后，操作栏显示“匹对”操作链接。重新匹对后，审批状态恢复为“待审批”状态，并可重新审批 | 1d | 2019-12-20 14:00 | 2019-12-23 14:00 | 256 | 15d |
| 258 |  | 新增取消匹对接口：具有取消匹对权限的用户可取消商品的匹对记录，取消后该记录恢复“未匹对”状态并可重新匹对 | 2d | 2019-12-23 14:00 | 2019-12-25 14:00 | 257 | 15d |
| 259 | 1.2.4.1.3 | **前端开发** | 1.5d | 2019-12-12 09:00 | 2019-12-13 14:00 |  | 24d |
| 260 |  | 变更记录审批界面开发 | 0.5d | 2019-12-12 09:00 | 2019-12-12 14:00 | 241 | 24d |
| 261 |  | 变更信息详情界面开发 | 0.5d | 2019-12-12 14:00 | 2019-12-13 09:00 | 260 | 24d |
| 262 |  | 审批流详情界面开发 | 0.5d | 2019-12-13 09:00 | 2019-12-13 14:00 | 261 | 24d |
| 263 | 1.2.4.1.4 | **前后端联调** | 2d | 2019-12-24 14:00 | 2019-12-26 14:00 |  | 15d |
| 264 |  | 待审批记录审批接口，审批时往审批历史记录表插入记录，审批通过时通过新增或更新商品匹对信息表 | 0.5d | 2019-12-24 14:00 | 2019-12-25 09:00 | 255 | 15.5d |
| 265 |  | 变更信息详情接口（变更前后记录对比） | 0.5d | 2019-12-25 09:00 | 2019-12-25 14:00 | 264 | 15.5d |
| 266 |  | 审批流详情接口（审批的所有过程记录） | 0.5d | 2019-12-25 14:00 | 2019-12-26 09:00 | 265 | 15.5d |
| 267 |  | 手动匹对接口改造：已匹对但是审批不通过的记录可重新进行手动匹对，审批不通过后，操作栏显示“匹对”操作链接。重新匹对后，审批状态恢复为“待审批”状态，并可重新审批 | 0.5d | 2019-12-25 14:00 | 2019-12-26 09:00 | 258 | 15d |
| 268 |  | 新增取消匹对接口：具有取消匹对权限的用户可取消商品的匹对记录，取消后该记录恢复“未匹对”状态并可重新匹对 | 0.5d | 2019-12-26 09:00 | 2019-12-26 14:00 | 267 | 15d |
| 269 | 1.2.4.2 | **医院商品匹对管理** | 11.5d | 2019-12-11 14:00 | 2019-12-27 09:00 |  | 5d |
| 270 | 1.2.4.2.1 | **后端设计** | 8d | 2019-12-11 14:00 | 2019-12-23 14:00 |  | 9d |
| 271 |  | 接口详细设计 | 8d | 2019-12-11 14:00 | 2019-12-23 14:00 | 249 | 9d |
| 272 | 1.2.4.2.2 | **后端开发** | 6d | 2019-12-18 09:00 | 2019-12-26 09:00 |  | 0.5d |
| 273 |  | 原医院商品匹对管理代码改造 | 2d | 2019-12-18 09:00 | 2019-12-20 09:00 | 252 | 15.5d |
| 274 |  | 待审批记录审批接口，审批时往审批历史记录表插入记录，审批通过时通过新增或更新商品匹对信息表 | 2d | 2019-12-18 14:00 | 2019-12-20 14:00 | 242 | 0d |
| 275 |  | 变更信息详情接口 | 1d | 2019-12-20 14:00 | 2019-12-23 14:00 | 274 | 0d |
| 276 |  | 审批流详情接口（审批的所有过程记录） | 1d | 2019-12-23 14:00 | 2019-12-24 14:00 | 275 | 0d |
| 277 |  | 匹对任务改造：处于“未匹对”状态的记录要可以自动重复匹对（例如先有供应商商品，后面才补充平台商品的，可以重新自动匹对，不需要生成新的匹对记录，只需要变更匹对状态） | 2d | 2019-12-20 09:00 | 2019-12-24 09:00 | 273 | 15.5d |
| 278 |  | 手动匹对接口改造：已匹对但是审批不通过的记录可重新进行手动匹对，审批不通过后，操作栏显示“匹对”操作链接。重新匹对后，审批状态恢复为“待审批”状态，并可重新审批 | 1d | 2019-12-24 14:00 | 2019-12-25 14:00 | 276 | 0d |
| 279 |  | 新增取消匹对接口：具有取消匹对权限的用户可取消商品的匹对记录，取消后该记录恢复“未匹对”状态并可重新匹对 | 2d | 2019-12-24 09:00 | 2019-12-26 09:00 | 277 | 15.5d |
| 280 | 1.2.4.2.3 | **前端开发** | 1.5d | 2019-12-18 14:00 | 2019-12-20 09:00 |  | 19.5d |

| ID | WBS | Task | Duration | Start | Finish | Predecessors | Total float |
| --- | --- | --- | --- | --- | --- | --- | --- |
| 281 |  | 变更记录审批界面开发 | 0.5d | 2019-12-18 14:00 | 2019-12-19 09:00 | 242 | 19.5d |
| 282 |  | 变更信息详情界面开发 | 0.5d | 2019-12-19 09:00 | 2019-12-19 14:00 | 281 | 19.5d |
| 283 |  | 审批流详情界面开发 | 0.5d | 2019-12-19 14:00 | 2019-12-20 09:00 | 282 | 19.5d |
| 284 | 1.2.4.2.4 | **前后端联调** | 1.5d | 2019-12-25 14:00 | 2019-12-27 09:00 |  | 0d |
| 285 |  | 待审批记录审批接口，审批时往审批历史记录表插入记录，审批通过时通过新增或更新商品匹对信息表 | 0.5d | 2019-12-25 14:00 | 2019-12-26 09:00 | 278 | 14.5d |
| 286 |  | 变更信息详情接口（变更前后记录对比） | 0.5d | 2019-12-26 09:00 | 2019-12-26 14:00 | 285 | 14.5d |
| 287 |  | 审批流详情接口（审批的所有过程记录） | 0.5d | 2019-12-26 14:00 | 2019-12-27 09:00 | 286 | 14.5d |
| 288 |  | 手动匹对接口改造：已匹对但是审批不通过的记录可重新进行手动匹对，审批不通过后，操作栏显示“匹对”操作链接。重新匹对后，审批状态恢复为“待审批”状态，并可重新审批 | 1d | 2019-12-25 14:00 | 2019-12-26 14:00 | 278 | 0d |
| 289 |  | 新增取消匹对接口：具有取消匹对权限的用户可取消商品的匹对记录，取消后该记录恢复“未匹对”状态并可重新匹对 | 0.5d | 2019-12-26 14:00 | 2019-12-27 09:00 | 288 | 0d |
| 290 |  | 研发人员自测 | 2d | 2019-12-27 09:00 | 2019-12-31 09:00 | 289 | 0d |
| 291 | 1.2.4.4 | **测试介入** | 4d | 2019-12-31 09:00 | 2020-01-07 09:00 |  | 8.5d |
| 292 |  | 封闭测试 | 2d | 2019-12-31 09:00 | 2020-01-03 09:00 | 290 | 8.5d |
| 293 |  | bug修复回归测试 | 2d | 2020-01-03 09:00 | 2020-01-07 09:00 | 292 | 8.5d |
| 294 | 1.2.5 | **采购供货** | 14.5d | 2019-12-23 14:00 | 2020-01-14 09:00 |  | 3.5d |
| 295 | 1.2.5.1 | **采购单管理** | 6d | 2019-12-23 14:00 | 2019-12-31 14:00 |  | 9d |
| 296 | 1.2.5.1.1 | **后端设计** | 1d | 2019-12-23 14:00 | 2019-12-24 14:00 |  | 9d |
| 297 |  | 接口详细设计 | 1d | 2019-12-23 14:00 | 2019-12-24 14:00 | 271 | 9d |
| 298 | 1.2.5.1.2 | **后端开发** | 2d | 2019-12-27 09:00 | 2019-12-31 09:00 |  | 9d |
| 299 |  | 采购单批量导入接口 | 2d | 2019-12-27 09:00 | 2019-12-31 09:00 | 289 | 9d |
| 300 | 1.2.5.1.3 | **前后端联调** | 0.5d | 2019-12-31 09:00 | 2019-12-31 14:00 |  | 9d |
| 301 |  | 采购单批量导入接口 | 0.5d | 2019-12-31 09:00 | 2019-12-31 14:00 | 299 | 9d |
| 302 | 1.2.5.2 | **供货单管理** | 8d | 2019-12-24 14:00 | 2020-01-06 14:00 |  | 4.5d |
| 303 | 1.2.5.2.1 | **后端设计** | 4d | 2019-12-24 14:00 | 2019-12-30 14:00 |  | 9d |
| 304 |  | 接口详细设计 | 4d | 2019-12-24 14:00 | 2019-12-30 14:00 | 297 | 9d |
| 305 | 1.2.5.2.2 | **后端开发** | 2.5d | 2019-12-31 09:00 | 2020-01-03 14:00 |  | 0d |
| 306 |  | 分页列表查询接口改造（返回供应商名称字段） | 0.5d | 2019-12-31 09:00 | 2019-12-31 14:00 | 290 | 0d |
| 307 |  | 供货单打印接口 | 2d | 2019-12-31 14:00 | 2020-01-03 14:00 | 301 | 9d |
| 308 |  | 一键生成标签接口 | 2d | 2019-12-31 09:00 | 2020-01-03 09:00 | 290 | 9.5d |
| 309 |  | 供货单批量导出接口（支持条件查询） | 1d | 2019-12-31 14:00 | 2020-01-02 14:00 | 306 | 0d |
| 310 | 1.2.5.2.3 | **前后端联调** | 2d | 2020-01-02 14:00 | 2020-01-06 14:00 |  | 0d |
| 311 |  | 分页列表查询接口改造（返回供应商名称字段） | 0.5d | 2020-01-02 14:00 | 2020-01-03 09:00 | 309 | 0d |
| 312 |  | 供货单打印接口 | 1d | 2020-01-03 14:00 | 2020-01-06 14:00 | 307 | 9d |
| 313 |  | 一键生成标签接口 | 1d | 2020-01-03 09:00 | 2020-01-06 09:00 | 308 | 9.5d |
| 314 |  | 供货单批量导出接口（支持条件查询） | 0.5d | 2020-01-03 09:00 | 2020-01-03 14:00 | 311 | 0d |
| 315 | 1.2.5.3 | **标签管理** | 4d | 2019-12-30 14:00 | 2020-01-06 14:00 |  | 9d |
| 316 | 1.2.5.3.1 | **后端设计** | 4d | 2019-12-30 14:00 | 2020-01-06 14:00 |  | 9d |
| 317 |  | 打包标签自适应设计 | 4d | 2019-12-30 14:00 | 2020-01-06 14:00 | 304 | 9d |
| 318 | 1.2.5.3.2 | **后端开发** | 1d | 2020-01-03 09:00 | 2020-01-06 09:00 |  | 9d |
| 319 |  | 后端打印标签接口改造 | 1d | 2020-01-03 09:00 | 2020-01-06 09:00 | 292 | 9d |
| 320 | 1.2.5.3.3 | **前后端联调** | 0.5d | 2020-01-06 09:00 | 2020-01-06 14:00 |  | 9d |
| 321 |  | 后端打印标记接口改造 | 0.5d | 2020-01-06 09:00 | 2020-01-06 14:00 | 319 | 9d |
| 322 | 1.2.5.4 | **验收单管理** | 0.5d | 2020-01-03 14:00 | 2020-01-06 09:00 |  | 0d |
| 323 | 1.2.5.4.1 | **后端开发** | 0.5d | 2020-01-03 14:00 | 2020-01-06 09:00 |  | 0d |
| 324 |  | 验收单转换任务（从临时表到MCP业务表），“验收单号”字段值，如果医院有回传，则记录医院的验收单号，否则系统自动生成。 | 0.5d | 2020-01-03 14:00 | 2020-01-06 09:00 | 314 | 0d |
| 325 | 1.2.5.4.2 | **外部系统联调** | 0.5d | 2019-10-08 09:00 | 2019-10-08 14:00 |  | 73d |
| 326 |  | 验收单数据下发（从MCP临时表到DSC） | 0.5d | 2019-10-08 09:00 | 2019-10-08 14:00 |  | 73d |
| 327 |  | 研发人员自测 | 2d | 2020-01-06 09:00 | 2020-01-08 09:00 | 324 | 3.5d |
| 328 | 1.2.5.6 | **测试介入** | 4d | 2020-01-08 09:00 | 2020-01-14 09:00 |  | 3.5d |
| 329 |  | 封闭测试 | 2d | 2020-01-08 09:00 | 2020-01-10 09:00 | 327 | 3.5d |
| 330 |  | bug修复回归测试 | 2d | 2020-01-10 09:00 | 2020-01-14 09:00 | 329 | 3.5d |
| 331 | 1.2.6 | **证照管理** | 2d | 2019-10-08 09:00 | 2019-10-10 09:00 |  | 71.5d |
| 332 | 1.2.6.1 | **后端设计** | 0.5d | 2019-10-08 09:00 | 2019-10-08 14:00 |  | 73d |
| 333 | 1.2.6.1.1 | **ETL数据同步设计** | 0.5d | 2019-10-08 09:00 | 2019-10-08 14:00 |  | 73d |
| 334 |  | 证照分类信息上传（ETL数据同步，从MCP临时表到DSC） | 0.5d | 2019-10-08 09:00 | 2019-10-08 14:00 |  | 73d |
| 335 |  | 厂商证照信息上传（ETL数据同步，从MCP临时表到DSC） | 0.5d | 2019-10-08 09:00 | 2019-10-08 14:00 |  | 73d |
| 336 |  | 供应商证照信息上传（ETL数据同步，从MCP临时表到DSC） | 0.5d | 2019-10-08 09:00 | 2019-10-08 14:00 |  | 73d |
| 337 |  | 商品证照信息上传（ETL数据同步，从MCP临时表到DSC） | 0.5d | 2019-10-08 09:00 | 2019-10-08 14:00 |  | 73d |
| 338 |  | 证照审批信息上传（ETL数据同步，从MCP临时表到DSC） | 0.5d | 2019-10-08 09:00 | 2019-10-08 14:00 |  | 73d |
| 339 | 1.2.6.2 | **后端开发** | 2d | 2019-10-08 09:00 | 2019-10-10 09:00 |  | 71.5d |
| 340 |  | 商品证照添加/编辑时，选择供应商商品接口改造（商品列表返回的商品名称和批准文号/注册证号） | 0.5d | 2019-10-08 09:00 | 2019-10-08 14:00 |  | 73d |
| 341 |  | 厂商证照批量导入接口 | 2d | 2019-10-08 09:00 | 2019-10-10 09:00 |  | 71.5d |
| 342 |  | 厂商证照批量导出接口（支持条件查询） | 2d | 2019-10-08 09:00 | 2019-10-10 09:00 |  | 71.5d |
| 343 |  | 供应商证照批量导入接口 | 2d | 2019-10-08 09:00 | 2019-10-10 09:00 |  | 71.5d |
| 344 |  | 供应商证照批量导出接口（支持条件查询） | 2d | 2019-10-08 09:00 | 2019-10-10 09:00 |  | 71.5d |
| 345 |  | 商品证照批量导入接口 | 2d | 2019-10-08 09:00 | 2019-10-10 09:00 |  | 71.5d |
| 346 |  | 商品证照批量导出接口（支持条件查询） | 2d | 2019-10-08 09:00 | 2019-10-10 09:00 |  | 71.5d |
| 347 |  | 代理商证照批量导入接口 | 2d | 2019-10-08 09:00 | 2019-10-10 09:00 |  | 71.5d |
| 348 |  | 代理商证照批量导出接口（支持条件查询） | 2d | 2019-10-08 09:00 | 2019-10-10 09:00 |  | 71.5d |
| 349 |  | 证照分类转换任务（从MCP业务表到临时表） | 2d | 2019-10-08 09:00 | 2019-10-10 09:00 |  | 71.5d |
| 350 |  | 厂商证照转换任务（从MCP业务表到临时表） | 2d | 2019-10-08 09:00 | 2019-10-10 09:00 |  | 71.5d |

| ID | WBS | Task | Duration | Start | Finish | Predecessors | Total float |
| --- | --- | --- | --- | --- | --- | --- | --- |
| 351 |  | 供应商证照转换任务（从MCP业务表到临时表） | 2d | 2019-10-08 09:00 | 2019-10-10 09:00 |  | 71.5d |
| 352 |  | 商品证照转换任务（从MCP业务表到临时表） | 2d | 2019-10-08 09:00 | 2019-10-10 09:00 |  | 71.5d |
| 353 |  | 证照审批转换任务（从MCP业务表到临时表） | 2d | 2019-10-08 09:00 | 2019-10-10 09:00 |  | 71.5d |
| 354 | 1.2.6.3 | **前后端联调** | 0.5d | 2019-10-08 09:00 | 2019-10-08 14:00 |  | 73d |
| 355 |  | 商品证照添加/编辑时，选择供应商商品接口改造（商品列表返回的商品名称和批准文号/注册证号） | 0.5d | 2019-10-08 09:00 | 2019-10-08 14:00 |  | 73d |
| 356 |  | 厂商证照批量导入接口 | 0.5d | 2019-10-08 09:00 | 2019-10-08 14:00 |  | 73d |
| 357 |  | 厂商证照批量导出接口（支持条件查询） | 0.5d | 2019-10-08 09:00 | 2019-10-08 14:00 |  | 73d |
| 358 |  | 供应商证照批量导入接口 | 0.5d | 2019-10-08 09:00 | 2019-10-08 14:00 |  | 73d |
| 359 |  | 供应商证照批量导出接口（支持条件查询） | 0.5d | 2019-10-08 09:00 | 2019-10-08 14:00 |  | 73d |
| 360 |  | 商品证照批量导入接口 | 0.5d | 2019-10-08 09:00 | 2019-10-08 14:00 |  | 73d |
| 361 |  | 商品证照批量导出接口（支持条件查询） | 0.5d | 2019-10-08 09:00 | 2019-10-08 14:00 |  | 73d |
| 362 |  | 代理商证照批量导入接口 | 0.5d | 2019-10-08 09:00 | 2019-10-08 14:00 |  | 73d |
| 363 |  | 代理商证照批量导出接口（支持条件查询） | 0.5d | 2019-10-08 09:00 | 2019-10-08 14:00 |  | 73d |
| 364 | 1.2.6.4 | **外部系统联调** | 1d | 2019-10-08 09:00 | 2019-10-09 09:00 |  | 72.5d |
| 365 |  | 证照分类信息上传（ETL数据同步，从MCP临时表到DSC） | 1d | 2019-10-08 09:00 | 2019-10-09 09:00 |  | 72.5d |
| 366 |  | 厂商证照信息上传（ETL数据同步，从MCP临时表到DSC） | 1d | 2019-10-08 09:00 | 2019-10-09 09:00 |  | 72.5d |
| 367 |  | 供应商证照信息上传（ETL数据同步，从MCP临时表到DSC） | 1d | 2019-10-08 09:00 | 2019-10-09 09:00 |  | 72.5d |
| 368 |  | 商品证照信息上传（ETL数据同步，从MCP临时表到DSC） | 1d | 2019-10-08 09:00 | 2019-10-09 09:00 |  | 72.5d |
| 369 |  | 证照审批信息上传（ETL数据同步，从MCP临时表到DSC） | 1d | 2019-10-08 09:00 | 2019-10-09 09:00 |  | 72.5d |
| 370 |  | 研发人员自测 | 2d | 2019-10-08 09:00 | 2019-10-10 09:00 |  | 71.5d |
| 371 | 1.3 | **退货管理** | 21d | 2019-10-12 14:00 | 2019-11-11 14:00 |  | 9d |
| 372 | 1.3.1 | **退货申请单管理** | 3d | 2019-10-08 09:00 | 2019-10-11 09:00 |  | 70.5d |
| 373 | 1.3.1.1 | **后端设计** | 3d | 2019-10-08 09:00 | 2019-10-11 09:00 |  | 70.5d |
| 374 |  | 表结构设计 | 1d | 2019-10-08 09:00 | 2019-10-09 09:00 |  | 72d |
| 375 |  | 接口详细设计 | 3d | 2019-10-08 09:00 | 2019-10-11 09:00 |  | 70d |
| 376 | 1.3.1.1.3 | **ETL数据同步设计** | 0.5d | 2019-10-08 09:00 | 2019-10-08 14:00 |  | 73d |
| 377 |  | 退货申请单数据上传（ETL数据同步，从DSC到MCP临时表） | 0.5d | 2019-10-08 09:00 | 2019-10-08 14:00 |  | 72.5d |
| 378 |  | 退货申请单确认状态下发（ETL数据同步，从MCP临时表到DSC） | 0.5d | 2019-10-08 09:00 | 2019-10-08 14:00 |  | 72.5d |
| 379 | 1.3.1.2 | **后端开发** | 2d | 2019-10-08 09:00 | 2019-10-10 09:00 |  | 71.5d |
| 380 |  | 主单分页列表查询接口 | 0.5d | 2019-10-08 09:00 | 2019-10-08 14:00 |  | 72.5d |
| 381 |  | 细单分页列表查询接口 | 0.5d | 2019-10-08 09:00 | 2019-10-08 14:00 |  | 72.5d |
| 382 |  | 主细单数据批量导入接口 | 2d | 2019-10-08 09:00 | 2019-10-10 09:00 |  | 71d |
| 383 |  | 主细单数据批量导出接口（支持条件查询） | 2d | 2019-10-08 09:00 | 2019-10-10 09:00 |  | 71d |
| 384 |  | 申请单审批接口 | 2d | 2019-10-08 09:00 | 2019-10-10 09:00 |  | 71d |
| 385 |  | 手动生成退货单接口 | 1d | 2019-10-08 09:00 | 2019-10-09 09:00 |  | 72d |
| 386 |  | 自动生成退货单任务 | 2d | 2019-10-08 09:00 | 2019-10-10 09:00 |  | 71d |
| 387 |  | 退货申请单数据转换任务（从临时表到MCP业务表） | 1d | 2019-10-08 09:00 | 2019-10-09 09:00 |  | 72d |
| 388 |  | 退货申请单确认状态下发任务（从MCP业务表到临时表） | 1d | 2019-10-08 09:00 | 2019-10-09 09:00 |  | 72d |
| 389 | 1.3.1.3 | **前端开发** | 1d | 2019-10-08 09:00 | 2019-10-09 09:00 |  | 72.5d |
| 390 |  | 申请单分页列表界面 | 0.5d | 2019-10-08 09:00 | 2019-10-08 14:00 |  | 72.5d |
| 391 |  | 手动生成退货单界面 | 0.5d | 2019-10-08 09:00 | 2019-10-08 14:00 |  | 72.5d |
| 392 |  | 申请单审批界面开发 | 1d | 2019-10-08 09:00 | 2019-10-09 09:00 |  | 72d |
| 393 | 1.3.1.4 | **前后端联调** | 0.5d | 2019-10-08 09:00 | 2019-10-08 14:00 |  | 73d |
| 394 |  | 主单分页列表查询接口 | 0.5d | 2019-10-08 09:00 | 2019-10-08 14:00 |  | 72.5d |
| 395 |  | 细单分页列表查询接口 | 0.5d | 2019-10-08 09:00 | 2019-10-08 14:00 |  | 72.5d |
| 396 |  | 主细单数据批量导入接口 | 0.5d | 2019-10-08 09:00 | 2019-10-08 14:00 |  | 72.5d |
| 397 |  | 主细单数据批量导出接口（支持条件查询） | 0.5d | 2019-10-08 09:00 | 2019-10-08 14:00 |  | 72.5d |
| 398 |  | 申请单审批接口 | 0.5d | 2019-10-08 09:00 | 2019-10-08 14:00 |  | 72.5d |
| 399 |  | 手动生成退货单接口 | 0.5d | 2019-10-08 09:00 | 2019-10-08 14:00 |  | 72.5d |
| 400 | 1.3.1.5 | **外部系统联调** | 1d | 2019-10-08 09:00 | 2019-10-09 09:00 |  | 72.5d |
| 401 |  | 退货申请单数据上传（ETL数据同步，从DSC到MCP临时表） | 1d | 2019-10-08 09:00 | 2019-10-09 09:00 |  | 72d |
| 402 |  | 退货申请单确认状态下发（ETL数据同步，从MCP临时表到DSC） | 1d | 2019-10-08 09:00 | 2019-10-09 09:00 |  | 72d |
| 403 |  | 研发人员自测 | 2d | 2019-10-08 09:00 | 2019-10-10 09:00 |  | 71d |
| 404 | 1.3.2 | **退货单管理** | 21d | 2019-10-12 14:00 | 2019-11-11 14:00 |  | 9d |
| 405 | 1.3.2.1 | **后端设计** | 8d | 2019-10-12 14:00 | 2019-10-23 14:00 |  | 9d |
| 406 |  | 表结构设计 | 1d | 2019-10-12 14:00 | 2019-10-14 14:00 | 6 | 9d |
| 407 |  | 接口详细设计 | 6d | 2019-10-14 14:00 | 2019-10-22 14:00 | 406 | 9d |
| 408 | 1.3.2.1.3 | **ETL数据同步设计** | 1d | 2019-10-22 14:00 | 2019-10-23 14:00 |  | 9d |
| 409 |  | 退货单数据上传（ETL数据同步，从DSC到MCP临时表） | 1d | 2019-10-22 14:00 | 2019-10-23 14:00 | 407 | 9d |
| 410 | 1.3.2.2 | **后端开发** | 5d | 2019-10-24 14:00 | 2019-10-31 14:00 |  | 0d |
| 411 |  | 主单分页列表查询接口 | 0.5d | 2019-10-24 14:00 | 2019-10-25 09:00 | 27 | 0d |
| 412 |  | 细单分页列表查询接口 | 0.5d | 2019-10-25 09:00 | 2019-10-25 14:00 | 411 | 0d |
| 413 |  | 主细单数据批量导入接口 | 2d | 2019-10-25 14:00 | 2019-10-29 14:00 | 412 | 0d |
| 414 |  | 主细单数据批量导出接口（支持条件查询） | 1d | 2019-10-29 14:00 | 2019-10-30 14:00 | 413 | 0d |
| 415 |  | 退货单新增接口 | 1d | 2019-10-24 14:00 | 2019-10-25 14:00 | 27 | 54d |
| 416 |  | 退货单编辑接口 | 1d | 2019-10-25 14:00 | 2019-10-28 14:00 | 415 | 54d |
| 417 |  | 退货单删除接口 | 0.5d | 2019-10-28 14:00 | 2019-10-29 09:00 | 416 | 54d |
| 418 |  | 退货单转换任务（从临时表到MCP业务表） | 1d | 2019-10-30 14:00 | 2019-10-31 14:00 | 414 | 0d |
| 419 | 1.3.2.3 | **前端开发** | 1.5d | 2019-10-24 14:00 | 2019-10-28 09:00 |  | 58.5d |
| 420 |  | 退货单分页列表界面 | 0.5d | 2019-10-24 14:00 | 2019-10-25 09:00 | 27 | 58.5d |

| ID | WBS | Task | Duration | Start | Finish | Predecessors | Total float |
| --- | --- | --- | --- | --- | --- | --- | --- |
| 421 |  | 退货单新增界面 | 0.5d | 2019-10-25 09:00 | 2019-10-25 14:00 | 420 | 58.5d |
| 422 |  | 退货单编辑界面 | 0.5d | 2019-10-25 14:00 | 2019-10-28 09:00 | 421 | 58.5d |
| 423 | 1.3.2.4 | **前后端联调** | 3.5d | 2019-10-29 09:00 | 2019-11-01 14:00 |  | 54d |
| 424 |  | 主单分页列表查询接口 | 0.5d | 2019-10-29 09:00 | 2019-10-29 14:00 | 417 | 54d |
| 425 |  | 细单分页列表查询接口 | 0.5d | 2019-10-29 14:00 | 2019-10-30 09:00 | 424 | 54d |
| 426 |  | 主细单数据批量导入接口 | 0.5d | 2019-10-30 09:00 | 2019-10-30 14:00 | 425 | 54d |
| 427 |  | 主细单数据批量导出接口（支持条件查询） | 0.5d | 2019-10-30 14:00 | 2019-10-31 09:00 | 426 | 54d |
| 428 |  | 退货单新增接口 | 0.5d | 2019-10-31 09:00 | 2019-10-31 14:00 | 427 | 54d |
| 429 |  | 退货单编辑接口 | 0.5d | 2019-10-31 14:00 | 2019-11-01 09:00 | 428 | 54d |
| 430 |  | 退货单删除接口 | 0.5d | 2019-11-01 09:00 | 2019-11-01 14:00 | 429 | 54d |
| 431 | 1.3.2.5 | **外部系统联调** | 1d | 2019-10-31 14:00 | 2019-11-01 14:00 |  | 0d |
| 432 |  | 退货单数据上传（ETL数据同步，从DSC到MCP临时表） | 1d | 2019-10-31 14:00 | 2019-11-01 14:00 | 418 | 0d |
| 433 |  | 研发人员自测 | 2d | 2019-11-01 14:00 | 2019-11-05 14:00 | 432 | 0d |
| 434 | 1.3.2.7 | **测试介入** | 4d | 2019-11-05 14:00 | 2019-11-11 14:00 |  | 0d |
| 435 |  | 封闭测试 | 2d | 2019-11-05 14:00 | 2019-11-07 14:00 | 433 | 0d |
| 436 |  | bug修复回归测试 | 2d | 2019-11-07 14:00 | 2019-11-11 14:00 | 435 | 0d |
| 437 | 1.4 | **骨科跟台** | 3d | 2019-10-08 09:00 | 2019-10-11 09:00 |  | 70.5d |
| 438 | 1.4.1 | **骨科耗材商品入库** | 1d | 2019-10-08 09:00 | 2019-10-09 09:00 |  | 72.5d |
| 439 | 1.4.1.1 | **后端设计** | 0.5d | 2019-10-08 09:00 | 2019-10-08 14:00 |  | 73d |
| 440 | 1.4.1.1.1 | **ETL数据同步设计** | 0.5d | 2019-10-08 09:00 | 2019-10-08 14:00 |  | 73d |
| 441 |  | 医院骨科耗材商品上传（ETL数据同步，从DSC上传到MCP临时表） | 0.5d | 2019-10-08 09:00 | 2019-10-08 14:00 |  | 72.5d |
| 442 | 1.4.1.2 | **后端开发** | 1d | 2019-10-08 09:00 | 2019-10-09 09:00 |  | 72.5d |
| 443 |  | 医院骨科耗材商品转换任务（从临时表到MCP业务表） | 1d | 2019-10-08 09:00 | 2019-10-09 09:00 |  | 72d |
| 444 |  | 骨科耗材查询列表接口（查询条件：骨科耗材商品名称） | 1d | 2019-10-08 09:00 | 2019-10-09 09:00 |  | 72d |
| 445 | 1.4.2 | **器械包管理** | 3d | 2019-10-08 09:00 | 2019-10-11 09:00 |  | 70.5d |
| 446 | 1.4.2.1 | **后端设计** | 3d | 2019-10-08 09:00 | 2019-10-11 09:00 |  | 70.5d |
| 447 |  | 表结构设计 | 1d | 2019-10-08 09:00 | 2019-10-09 09:00 |  | 72d |
| 448 |  | 接口详细设计 | 3d | 2019-10-08 09:00 | 2019-10-11 09:00 |  | 70d |
| 449 | 1.4.2.2 | **后端开发** | 2d | 2019-10-08 09:00 | 2019-10-10 09:00 |  | 71.5d |
| 450 |  | 分页列表查询接口 | 1d | 2019-10-08 09:00 | 2019-10-09 09:00 |  | 72d |
| 451 |  | 器械包条件查询接口（查询条件：器械包名称、器械包编号） | 1d | 2019-10-08 09:00 | 2019-10-09 09:00 |  | 72d |
| 452 |  | 新增器械包接口 | 1d | 2019-10-08 09:00 | 2019-10-09 09:00 |  | 72d |
| 453 |  | 编辑器械包接口 | 1d | 2019-10-08 09:00 | 2019-10-09 09:00 |  | 72d |
| 454 |  | 停用/启用器械包接口 | 0.5d | 2019-10-08 09:00 | 2019-10-08 14:00 |  | 72.5d |
| 455 |  | 删除器械包接口 | 0.5d | 2019-10-08 09:00 | 2019-10-08 14:00 |  | 72.5d |
| 456 |  | 器械包批量导入接口 | 2d | 2019-10-08 09:00 | 2019-10-10 09:00 |  | 71d |
| 457 |  | 器械包批量导出接口（支持条件查询） | 2d | 2019-10-08 09:00 | 2019-10-10 09:00 |  | 71d |
| 458 | 1.4.2.3 | **前端开发** | 0.5d | 2019-10-08 09:00 | 2019-10-08 14:00 |  | 73d |
| 459 |  | 分页列表查询界面开发 | 0.5d | 2019-10-08 09:00 | 2019-10-08 14:00 |  | 72.5d |
| 460 |  | 新增器械包界面开发 | 0.5d | 2019-10-08 09:00 | 2019-10-08 14:00 |  | 72.5d |
| 461 |  | 编辑器械包界面开发 | 0.5d | 2019-10-08 09:00 | 2019-10-08 14:00 |  | 72.5d |
| 462 | 1.4.2.4 | **前后端联调** | 0.5d | 2019-10-08 09:00 | 2019-10-08 14:00 |  | 73d |
| 463 |  | 分页列表查询接口 | 0.5d | 2019-10-08 09:00 | 2019-10-08 14:00 |  | 72.5d |
| 464 |  | 骨科耗材查询列表接口（查询条件：骨科耗材商品名称） | 0.5d | 2019-10-08 09:00 | 2019-10-08 14:00 |  | 72.5d |
| 465 |  | 新增器械包接口 | 0.5d | 2019-10-08 09:00 | 2019-10-08 14:00 |  | 72.5d |
| 466 |  | 编辑器械包接口 | 0.5d | 2019-10-08 09:00 | 2019-10-08 14:00 |  | 72.5d |
| 467 |  | 停用/启用器械包接口 | 0.5d | 2019-10-08 09:00 | 2019-10-08 14:00 |  | 72.5d |
| 468 |  | 删除器械包接口 | 0.5d | 2019-10-08 09:00 | 2019-10-08 14:00 |  | 72.5d |
| 469 |  | 器械包批量导入接口 | 0.5d | 2019-10-08 09:00 | 2019-10-08 14:00 |  | 72.5d |
| 470 |  | 器械包批量导出接口（支持条件查询） | 0.5d | 2019-10-08 09:00 | 2019-10-08 14:00 |  | 72.5d |
| 471 |  | 研发人员自测 | 2d | 2019-10-08 09:00 | 2019-10-10 09:00 |  | 71d |
| 472 | 1.4.3 | **手术套包管理** | 3d | 2019-10-08 09:00 | 2019-10-11 09:00 |  | 70.5d |
| 473 | 1.4.3.1 | **后端设计** | 3d | 2019-10-08 09:00 | 2019-10-11 09:00 |  | 70.5d |
| 474 |  | 表结构设计 | 1d | 2019-10-08 09:00 | 2019-10-09 09:00 |  | 72d |
| 475 |  | 接口详细设计 | 3d | 2019-10-08 09:00 | 2019-10-11 09:00 |  | 70d |
| 476 | 1.4.3.2 | **后端开发** | 2d | 2019-10-08 09:00 | 2019-10-10 09:00 |  | 71.5d |
| 477 |  | 分页列表查询接口 | 1d | 2019-10-08 09:00 | 2019-10-09 09:00 |  | 72d |
| 478 |  | 新增手术套包接口 | 1d | 2019-10-08 09:00 | 2019-10-09 09:00 |  | 72d |
| 479 |  | 编辑手术套包接口 | 1d | 2019-10-08 09:00 | 2019-10-09 09:00 |  | 72d |
| 480 |  | 停用/启用手术套包接口 | 0.5d | 2019-10-08 09:00 | 2019-10-08 14:00 |  | 72.5d |
| 481 |  | 删除手术套包接口 | 0.5d | 2019-10-08 09:00 | 2019-10-08 14:00 |  | 72.5d |
| 482 |  | 手术套包批量导入接口 | 2d | 2019-10-08 09:00 | 2019-10-10 09:00 |  | 71d |
| 483 |  | 手术套包批量导出接口（支持条件查询） | 2d | 2019-10-08 09:00 | 2019-10-10 09:00 |  | 71d |
| 484 | 1.4.3.3 | **前端开发** | 0.5d | 2019-10-08 09:00 | 2019-10-08 14:00 |  | 73d |
| 485 |  | 分页列表查询界面开发 | 0.5d | 2019-10-08 09:00 | 2019-10-08 14:00 |  | 72.5d |
| 486 |  | 选择器械包界面开发 | 0.5d | 2019-10-08 09:00 | 2019-10-08 14:00 |  | 72.5d |
| 487 |  | 新增手术套包界面开发 | 0.5d | 2019-10-08 09:00 | 2019-10-08 14:00 |  | 72.5d |
| 488 |  | 编辑手术套包界面开发 | 0.5d | 2019-10-08 09:00 | 2019-10-08 14:00 |  | 72.5d |
| 489 | 1.4.3.4 | **前后端联调** | 0.5d | 2019-10-08 09:00 | 2019-10-08 14:00 |  | 73d |
| 490 |  | 分页列表查询接口 | 0.5d | 2019-10-08 09:00 | 2019-10-08 14:00 |  | 72.5d |

| ID | WBS | Task | Duration | Start | Finish | Total float |
| --- | --- | --- | --- | --- | --- | --- |
| 491 |  | 选择器械包条件查询接口（查询条件：器械包名称、器械包编号） | 0.5d | 2019-10-08 09:00 | 2019-10-08 14:00 | 72.5d |
| 492 |  | 新增手术套包接口 | 0.5d | 2019-10-08 09:00 | 2019-10-08 14:00 | 72.5d |
| 493 |  | 编辑手术套包接口 | 0.5d | 2019-10-08 09:00 | 2019-10-08 14:00 | 72.5d |
| 494 |  | 停用/启用手术套包接口 | 0.5d | 2019-10-08 09:00 | 2019-10-08 14:00 | 72.5d |
| 495 |  | 删除手术套包接口 | 0.5d | 2019-10-08 09:00 | 2019-10-08 14:00 | 72.5d |
| 496 |  | 手术套包批量导入接口 | 0.5d | 2019-10-08 09:00 | 2019-10-08 14:00 | 72.5d |
| 497 |  | 手术套包批量导出接口（支持条件查询） | 0.5d | 2019-10-08 09:00 | 2019-10-08 14:00 | 72.5d |
| 498 |  | 研发人员自测 | 2d | 2019-10-08 09:00 | 2019-10-10 09:00 | 71d |
| 499 | 1.4.4 | **手术单管理** | 3d | 2019-10-08 09:00 | 2019-10-11 09:00 | 70.5d |
| 500 | 1.4.4.1 | **后端设计** | 3d | 2019-10-08 09:00 | 2019-10-11 09:00 | 70.5d |
| 501 |  | 表结构设计 | 1d | 2019-10-08 09:00 | 2019-10-09 09:00 | 72.5d |
| 502 |  | 接口详细设计 | 3d | 2019-10-08 09:00 | 2019-10-11 09:00 | 70.5d |
| 503 | 1.4.4.1.3 | **ETL数据同步设计** | 0.5d | 2019-10-08 09:00 | 2019-10-08 14:00 | 73d |
| 504 |  | 医院手术单数据上传（ETL数据同步，从DSC到MCP临时表） | 0.5d | 2019-10-08 09:00 | 2019-10-08 14:00 | 73d |
| 505 | 1.4.4.2 | **后端开发** | 2d | 2019-10-08 09:00 | 2019-10-10 09:00 | 71.5d |
| 506 |  | 医院手术单数据转换任务（从临时表到MCP业务表） | 1d | 2019-10-08 09:00 | 2019-10-09 09:00 | 72.5d |
| 507 |  | 分页列表查询接口 | 1d | 2019-10-08 09:00 | 2019-10-09 09:00 | 72.5d |
| 508 |  | 手术单新增接口 | 1d | 2019-10-08 09:00 | 2019-10-09 09:00 | 72.5d |
| 509 |  | 手术单编辑接口 | 1d | 2019-10-08 09:00 | 2019-10-09 09:00 | 72.5d |
| 510 |  | 手术单生成跟台目录接口 | 1d | 2019-10-08 09:00 | 2019-10-09 09:00 | 72.5d |
| 511 |  | 手术单删除接口 | 0.5d | 2019-10-08 09:00 | 2019-10-08 14:00 | 73d |
| 512 |  | 手术单批量导入接口 | 2d | 2019-10-08 09:00 | 2019-10-10 09:00 | 71.5d |
| 513 |  | 手术单批量导出接口（支持条件查询） | 2d | 2019-10-08 09:00 | 2019-10-10 09:00 | 71.5d |
| 514 | 1.4.4.3 | **前端开发** | 0.5d | 2019-10-08 09:00 | 2019-10-08 14:00 | 73d |
| 515 |  | 分页列表查询界面开发 | 0.5d | 2019-10-08 09:00 | 2019-10-08 14:00 | 73d |
| 516 |  | 新增界面开发 | 0.5d | 2019-10-08 09:00 | 2019-10-08 14:00 | 73d |
| 517 |  | 编辑界面开发 | 0.5d | 2019-10-08 09:00 | 2019-10-08 14:00 | 73d |
| 518 |  | 手动生成跟台目录界面开发 | 0.5d | 2019-10-08 09:00 | 2019-10-08 14:00 | 73d |
| 519 | 1.4.4.4 | **前后端联调** | 0.5d | 2019-10-08 09:00 | 2019-10-08 14:00 | 73d |
| 520 |  | 分页列表查询接口 | 0.5d | 2019-10-08 09:00 | 2019-10-08 14:00 | 73d |
| 521 |  | 手术单新增接口 | 0.5d | 2019-10-08 09:00 | 2019-10-08 14:00 | 73d |
| 522 |  | 手术单编辑接口 | 0.5d | 2019-10-08 09:00 | 2019-10-08 14:00 | 73d |
| 523 |  | 骨科耗材查询列表接口（查询条件：骨科耗材商品名称） | 0.5d | 2019-10-08 09:00 | 2019-10-08 14:00 | 73d |
| 524 |  | 手术单生成跟台目录接口 | 0.5d | 2019-10-08 09:00 | 2019-10-08 14:00 | 73d |
| 525 |  | 手术单删除接口 | 0.5d | 2019-10-08 09:00 | 2019-10-08 14:00 | 73d |
| 526 |  | 手术单批量导入接口 | 0.5d | 2019-10-08 09:00 | 2019-10-08 14:00 | 73d |
| 527 |  | 手术单批量导出接口（支持条件查询） | 0.5d | 2019-10-08 09:00 | 2019-10-08 14:00 | 73d |
| 528 | 1.4.4.5 | **外部系统联调** | 1d | 2019-10-08 09:00 | 2019-10-09 09:00 | 72.5d |
| 529 |  | 医院手术单数据上传（ETL数据同步，从DSC到MCP临时表） | 1d | 2019-10-08 09:00 | 2019-10-09 09:00 | 72.5d |
| 530 |  | 研发人员自测 | 2d | 2019-10-08 09:00 | 2019-10-10 09:00 | 71.5d |
| 531 | 1.4.5 | **跟台目录管理** | 3d | 2019-10-08 09:00 | 2019-10-11 09:00 | 70.5d |
| 532 | 1.4.5.1 | **后端设计** | 3d | 2019-10-08 09:00 | 2019-10-11 09:00 | 70.5d |
| 533 |  | 表结构设计 | 1d | 2019-10-08 09:00 | 2019-10-09 09:00 | 72.5d |
| 534 |  | 结构详细设计 | 3d | 2019-10-08 09:00 | 2019-10-11 09:00 | 70.5d |
| 535 | 1.4.5.1.3 | **ETL数据同步设计** | 0.5d | 2019-10-08 09:00 | 2019-10-08 14:00 | 73d |
| 536 |  | 跟台目录数据下发（ETL数据同步，从MCP临时表下发到DSC） | 0.5d | 2019-10-08 09:00 | 2019-10-08 14:00 | 73d |
| 537 | 1.4.5.2 | **后端开发** | 2d | 2019-10-08 09:00 | 2019-10-10 09:00 | 71.5d |
| 538 |  | 跟台目录数据转换任务（从MCP业务表导临时表） | 1d | 2019-10-08 09:00 | 2019-10-09 09:00 | 72.5d |
| 539 |  | 分页列表查询接口 | 1d | 2019-10-08 09:00 | 2019-10-09 09:00 | 72.5d |
| 540 |  | 手术单列表查询接口（手术单编号查询） | 1d | 2019-10-08 09:00 | 2019-10-09 09:00 | 72.5d |
| 541 |  | 新增跟台目录接口 | 1d | 2019-10-08 09:00 | 2019-10-09 09:00 | 72.5d |
| 542 |  | 编辑跟台目录接口 | 1d | 2019-10-08 09:00 | 2019-10-09 09:00 | 72.5d |
| 543 |  | 跟台目录提交医院接口 | 1d | 2019-10-08 09:00 | 2019-10-09 09:00 | 72.5d |
| 544 |  | 删除根台目录接口 | 0.5d | 2019-10-08 09:00 | 2019-10-08 14:00 | 73d |
| 545 |  | 跟台目录批量导入接口 | 2d | 2019-10-08 09:00 | 2019-10-10 09:00 | 71.5d |
| 546 |  | 跟台目录批量导出接口（支持条件查询） | 2d | 2019-10-08 09:00 | 2019-10-10 09:00 | 71.5d |
| 547 | 1.4.5.3 | **前端开发** | 0.5d | 2019-10-08 09:00 | 2019-10-08 14:00 | 73d |
| 548 |  | 分页列表查询界面开发 | 0.5d | 2019-10-08 09:00 | 2019-10-08 14:00 | 73d |
| 549 |  | 新增界面开发 | 0.5d | 2019-10-08 09:00 | 2019-10-08 14:00 | 73d |
| 550 |  | 编辑界面开发 | 0.5d | 2019-10-08 09:00 | 2019-10-08 14:00 | 73d |
| 551 | 1.4.5.4 | **前后端联调** | 0.5d | 2019-10-08 09:00 | 2019-10-08 14:00 | 73d |
| 552 |  | 分页列表查询接口 | 0.5d | 2019-10-08 09:00 | 2019-10-08 14:00 | 73d |
| 553 |  | 手术单列表查询接口（手术单编号查询） | 0.5d | 2019-10-08 09:00 | 2019-10-08 14:00 | 73d |
| 554 |  | 骨科耗材查询列表接口（查询条件：骨科耗材商品名称） | 0.5d | 2019-10-08 09:00 | 2019-10-08 14:00 | 73d |
| 555 |  | 新增跟台目录接口 | 0.5d | 2019-10-08 09:00 | 2019-10-08 14:00 | 73d |
| 556 |  | 编辑跟台目录接口 | 0.5d | 2019-10-08 09:00 | 2019-10-08 14:00 | 73d |
| 557 |  | 跟台目录提交医院接口 | 0.5d | 2019-10-08 09:00 | 2019-10-08 14:00 | 73d |
| 558 |  | 删除根台目录接口 | 0.5d | 2019-10-08 09:00 | 2019-10-08 14:00 | 73d |
| 559 |  | 跟台目录批量导入接口 | 0.5d | 2019-10-08 09:00 | 2019-10-08 14:00 | 73d |
| 560 |  | 跟台目录批量导出接口（支持条件查询） | 0.5d | 2019-10-08 09:00 | 2019-10-08 14:00 | 73d |

| ID | WBS | Task | Duration | Start | Finish | Predecessors | Total float |
| --- | --- | --- | --- | --- | --- | --- | --- |
| 561 | 1.4.5.5 | **外部系统联调** | 1d | 2019-10-08 09:00 | 2019-10-09 09:00 |  | 72.5d |
| 562 |  | 跟台目录数据下发（ETL数据同步，从MCP临时表下发到DSC） | 1d | 2019-10-08 09:00 | 2019-10-09 09:00 |  | 72.5d |
| 563 |  | 研发人员自测 | 2d | 2019-10-08 09:00 | 2019-10-10 09:00 |  | 71.5d |
| 564 | 1.5 | **SPD数据同步对接** | 4.5d | 2020-01-06 09:00 | 2020-01-10 14:00 |  | 0d |
| 565 | 1.5.1 | **后端开发** | 2.5d | 2020-01-06 09:00 | 2020-01-08 14:00 |  | 0d |
| 566 |  | 医院信息转换任务联调（从临时表到MCP业务表） | 0.5d | 2020-01-06 09:00 | 2020-01-06 14:00 | 324 | 0d |
| 567 |  | 医院供应商关系转换任务（从临时表到MCP业务表） | 0.5d | 2020-01-06 14:00 | 2020-01-07 09:00 | 566 | 0d |
| 568 |  | 医院库房转换任务（从临时表到MCP业务表） | 0.5d | 2020-01-07 09:00 | 2020-01-07 14:00 | 567 | 0d |
| 569 |  | 供应商商品转换任务（从MCP业务表到临时表） | 0.5d | 2020-01-07 14:00 | 2020-01-08 09:00 | 568 | 0d |
| 570 |  | 医院商品转换任务（从临时表到MCP业务表） | 0.5d | 2020-01-08 09:00 | 2020-01-08 14:00 | 569 | 0d |
| 571 |  | 采购单（主细单）转换任务（从临时到MCP业务表） | 0.5d | 2020-01-06 09:00 | 2020-01-06 14:00 | 324 | 6d |
| 572 |  | 收货单（主细单）转换任务（从MCP业务表到临时表） | 0.5d | 2020-01-06 14:00 | 2020-01-07 09:00 | 571 | 6d |
| 573 |  | 验收单（主细单）转换任务（从临时表到MCP业务表） | 0.5d | 2020-01-07 09:00 | 2020-01-07 14:00 | 572 | 6d |
| 574 |  | 退货单（主细单）转换任务（从临时表到MCP业务表） | 0.5d | 2020-01-07 14:00 | 2020-01-08 09:00 | 573 | 6d |
| 575 | 1.5.2 | **外部系统联调** | 2.5d | 2020-01-08 09:00 | 2020-01-10 14:00 |  | 0.5d |
| 576 |  | 医院信息数据上传（ETL数据同步，从SPD到MCP临时表） | 0.5d | 2020-01-08 09:00 | 2020-01-08 14:00 | 327 | 6d |
| 577 |  | 医院供应商关系数据上传（ETL数据同步，从SPD到MCP临时表） | 0.5d | 2020-01-08 14:00 | 2020-01-09 09:00 | 576 | 6d |
| 578 |  | 医院库房数据上传（ETL数据同步，从SPD到MCP临时表） | 0.5d | 2020-01-09 09:00 | 2020-01-09 14:00 | 577 | 6d |
| 579 |  | 供应商商品数据下发（ETL数据同步，从MCP临时表到SPD） | 0.5d | 2020-01-08 09:00 | 2020-01-08 14:00 | 574 | 6d |
| 580 |  | 医院商品数据上传（ETL数据同步，从SPD到MCP临时表） | 0.5d | 2020-01-08 14:00 | 2020-01-09 09:00 | 579 | 6d |
| 581 |  | 采购主单数据上传（ETL数据同步，从SPD到MCP临时表） | 0.5d | 2020-01-09 09:00 | 2020-01-09 14:00 | 580 | 6d |
| 582 |  | 采购细单数据上传（ETL数据同步，从SPD到MCP临时表） | 0.5d | 2020-01-08 09:00 | 2020-01-08 14:00 | 327 | 6d |
| 583 |  | 收货主单数据下发（ETL数据同步，从MCP临时表到SPD） | 0.5d | 2020-01-08 14:00 | 2020-01-09 09:00 | 582 | 6d |
| 584 |  | 收货细单数据下发（ETL数据同步，从MCP临时表到SPD） | 0.5d | 2020-01-09 09:00 | 2020-01-09 14:00 | 583 | 6d |
| 585 |  | 验收主单数据上传（ETL数据同步，从SPD到MCP临时表） | 0.5d | 2020-01-08 14:00 | 2020-01-09 09:00 | 570 | 0d |
| 586 |  | 验收细单数据上传（ETL数据同步，从SPD到MCP临时表） | 0.5d | 2020-01-09 09:00 | 2020-01-09 14:00 | 585 | 0d |
| 587 |  | 退货主单数据上传（ETL数据同步，从SPD到MCP临时表） | 0.5d | 2020-01-09 14:00 | 2020-01-10 09:00 | 586 | 0d |
| 588 |  | 退货细单数据上传（ETL数据同步，从SPD到MCP临时表） | 0.5d | 2020-01-10 09:00 | 2020-01-10 14:00 | 587 | 0d |
| 589 | 1.6 | **系统集成测试** | 5d | 2020-01-10 14:00 | 2020-01-17 14:00 |  | 0d |
| 590 |  | 封闭测试 | 3d | 2020-01-10 14:00 | 2020-01-15 14:00 | 588 | 0d |
| 591 |  | bug修复回归测试 | 2d | 2020-01-15 14:00 | 2020-01-17 14:00 | 590 | 0d |

## Version 2 (saved 2019-11-08, file MCP标准版V1.2迭代工作量评估(年前版本20191108).mpp)

Last finish 2020-01-17 → 2020-01-16 (-1d). Complete tasks 1 → 60.

Changed:

| ID | Task | Start | Finish | Duration | Complete | Total float | Predecessors | Other |
| --- | --- | --- | --- | --- | --- | --- | --- | --- |
| 1 | **MCP标准版V1.2迭代** |  | 2020-01-17 14:00 → 2020-01-16 09:00 (-1d) | 73.5d → 72d | 0% → 24% |  |  |  |
| 2 | **ERP接入标准接口** |  |  |  | 4% → 81% | 54d → 52.5d |  |  |
| 5 | **后端设计** | 2019-10-09 14:00 A | 2019-10-12 14:00 A |  | 0% → 100% | 0d → none |  |  |
| 6 | Mule ESB数据转换设计 | 2019-10-09 14:00 A | 2019-10-12 14:00 A |  | 0% → 100% | 0d → none |  |  |
| 7 | MCP标准接口详细设计 | 2019-10-09 14:00 A | 2019-10-12 14:00 A |  | 0% → 100% | 69d → none |  |  |
| 8 | **后端Mule ESB开发** | 2019-10-12 14:00 A | 2019-10-18 14:00 A |  | 0% → 100% | 0d → none |  |  |
| 9 | 数据转换公共方法的封装（ERP接口数据格式转成MCP接口数据格式） | 2019-10-12 14:00 A | 2019-10-17 14:00 A |  | 0% → 100% | 62d → none |  |  |
| 10 | 供应商商品数据转换 | 2019-10-17 14:00 A | 2019-10-18 14:00 A |  | 0% → 100% | 62d → none |  |  |
| 11 | 采购单数据转换 | 2019-10-12 14:00 A | 2019-10-14 14:00 A |  | 0% → 100% | 62d → none |  |  |
| 12 | 采购单确认数据转换 | 2019-10-14 14:00 A | 2019-10-15 14:00 A |  | 0% → 100% | 62d → none |  |  |
| 13 | 供货单数据转换 | 2019-10-15 14:00 A | 2019-10-16 14:00 A |  | 0% → 100% | 62d → none |  |  |
| 16 | 退货单数据转换 | 2019-10-12 14:00 A | 2019-10-14 14:00 → 2019-10-15 14:00 A (+1d) | 1d → 2d | 0% → 100% | 0d → none |  | resources 刘振兴 → 刘振兴 [50%] |
| 17 | 退货单确认数据转换 | 2019-10-14 14:00 → 2019-10-15 14:00 (+1d) | 2019-10-15 14:00 → 2019-10-16 14:00 (+1d) |  |  | 0d → 64.5d |  |  |
| 18 | **后端标准接口开发** | 2019-10-15 14:00 A | 2019-10-22 14:00 A |  | 0% → 100% | 0d → none |  |  |
| 19 | 供应商商品信息上传，商品入库（如果是骨科耗材商品，如果平台没有维护，则要同步到平台骨科耗进行管理材） | 2019-10-18 14:00 A | 2019-10-22 14:00 A |  | 0% → 100% | 62d → none |  |  |
| 20 | 采购单下发接口 | 2019-10-16 14:00 A | 2019-10-18 14:00 A |  | 0% → 100% | 62d → none |  |  |
| 21 | 采购单确认上传接口 | 2019-10-18 14:00 A | 2019-10-22 14:00 A |  | 0% → 100% | 62d → none |  |  |
| 22 | 供货单上传接口（未提交到医院运行供应商进行修改） | 2019-10-15 14:00 A | 2019-10-17 14:00 A |  | 0% → 100% | 0d → none |  |  |
| 25 | 退货单下发接口 | 2019-10-17 14:00 A | 2019-10-21 14:00 A |  | 0% → 100% | 0d → none |  |  |
| 27 | 研发人员自测 | 2019-10-22 14:00 → 2019-10-21 14:00 A (-1d) | 2019-10-24 14:00 → 2019-10-23 14:00 A (-1d) |  | 0% → 100% | 0d → none |  |  |
| 28 | **外部系统联调** | 2019-10-24 14:00 → 2019-10-23 14:00 (-1d) |  | 6d → 7d |  | 41.5d → 52.5d |  |  |
| 29 | 供应商商品信息上传，商品入库（如果是骨科耗材商品，如果平台没有维护，则要同步到平台骨科耗进行管理材） | 2019-10-24 14:00 → 2019-10-23 14:00 (-1d) |  | 1d → 2d |  | 41.5d → 52.5d |  | resources 刘振兴 → 刘振兴 [50%] |
| 30 | 采购单下发接口 |  | 2019-10-28 14:00 → 2019-10-29 14:00 (+1d) | 1d → 2d |  | 41.5d → 52.5d |  | resources 刘振兴 → 刘振兴 [50%] |
| 31 | 采购单确认上传接口 | 2019-10-28 14:00 → 2019-10-29 14:00 (+1d) | 2019-10-29 14:00 → 2019-10-30 14:00 (+1d) |  |  | 41.5d → 52.5d |  |  |
| 32 | 供货单上传接口 | 2019-10-29 14:00 → 2019-10-30 14:00 (+1d) | 2019-10-30 14:00 → 2019-10-31 14:00 (+1d) |  |  | 41.5d → 52.5d |  |  |
| 35 | 退货单下发接口 | 2019-10-30 14:00 → 2019-10-31 14:00 (+1d) | 2019-10-31 14:00 → 2019-11-01 14:00 (+1d) |  |  | 41.5d → 52.5d |  |  |
| 36 | 退货单确认上传接口 | 2019-10-31 14:00 → 2019-11-01 14:00 (+1d) | 2019-11-01 14:00 → 2019-11-04 14:00 (+3d) |  |  | 41.5d → 51.5d |  |  |
| 37 | **一期功能优化** | 2019-10-23 14:00 A | 2020-01-14 09:00 → 2020-01-14 14:00 | 57.5d → 58d | 0% → 9% | 3.5d → 1.5d |  |  |
| 38 | **组件集成** | 2019-10-23 14:00 A | 2019-11-07 14:00 → 2019-11-06 14:00 A (-1d) | 11d → 10d | 0% → 100% | 9d → none |  |  |
| 39 | 工作流（Activiti）集成 | 2019-11-01 14:00 → 2019-10-31 14:00 A (-1d) | 2019-11-05 14:00 → 2019-11-04 14:00 A (-1d) |  | 0% → 100% | 50d → none |  |  |
| 40 | 工作流（Activiti）审批服务方法封装 | 2019-11-05 14:00 → 2019-11-04 14:00 A (-1d) | 2019-11-06 14:00 → 2019-11-05 14:00 A (-1d) |  | 0% → 100% | 50d → none |  |  |
| 41 | 工作流（Activiti）审批历史记录查询方法封装 | 2019-11-06 14:00 → 2019-11-05 14:00 A (-1d) | 2019-11-07 14:00 → 2019-11-06 14:00 A (-1d) |  | 0% → 100% | 50d → none |  |  |
| 42 | ireport报表工具集成 | 2019-11-05 14:00 → 2019-11-04 14:00 (-1d) | 2019-11-07 14:00 → 2019-11-06 14:00 (-1d) |  |  | 50d → 49.5d |  |  |
| 43 | ireport报表工具公共方法封装 | 2019-11-06 14:00 → 2019-11-05 14:00 (-1d) | 2019-11-08 14:00 → 2019-11-07 14:00 (-1d) |  |  | 49d → 48.5d |  |  |
| 44 | Excel批量导入/导出公共方法封装 | 2019-10-23 14:00 A | 2019-10-25 14:00 A |  | 0% → 100% | 9d → none |  |  |
| 45 | **机构管理** | 2019-10-25 14:00 A | 2019-11-28 09:00 → 2019-11-29 14:00 (+1d) | 23.5d → 25d | 0% → 24% | 9d → 32.5d |  |  |
| 46 | **厂商管理** | 2019-10-25 14:00 A | 2019-11-12 14:00 → 2019-11-14 14:00 (+2d) | 12d → 14d | 0% → 76% | 9d → 41d |  |  |
| 47 | **后端设计** | 2019-10-25 14:00 A | 2019-11-05 14:00 A |  | 0% → 100% | 9d → none |  |  |
| 48 | 表结构设计（现有的厂商信息表改为厂商信息待审批表，新增厂商信息表、厂商信息审批历史记录表） | 2019-10-25 14:00 A | 2019-10-29 14:00 A |  | 0% → 100% | 9d → none |  |  |
| 49 | 接口详细设计 | 2019-11-01 14:00 A | 2019-11-05 14:00 A |  | 0% → 100% | 41.5d → none | 36 → 41 | resources 刘振兴 → 文超 |
| 50 | **后端开发** | 2019-11-01 14:00 → 2019-10-31 14:00 A (-1d) | 2019-11-08 14:00 → 2019-11-11 14:00 (+3d) | 5d → 7d | 0% → 88% | 43.5d → 41d |  |  |
| 51 | 原厂商信息管理代码改造 | 2019-11-01 14:00 → 2019-10-31 14:00 A (-1d) | 2019-11-05 14:00 → 2019-11-04 14:00 A (-1d) |  | 0% → 100% | 43.5d → none |  |  |
| 52 | 待审批记录审批接口，审批时往审批历史记录表插入记录，审批通过时通过新增或更新厂商信息表 | 2019-11-05 14:00 A | 2019-11-07 14:00 A |  | 0% → 100% | 43.5d → none | 49 → 57 | resources 刘振兴 → 杨朝辉 |
| 53 | 变更信息详情接口（变更前后记录对比） | 2019-11-07 14:00 A | 2019-11-08 14:00 A |  | 0% → 100% | 43.5d → none |  | resources 刘振兴 → 杨朝辉 |
| 54 | 审批流详情接口（审批的所有过程记录） | 2019-11-05 14:00 → 2019-11-08 14:00 (+3d) | 2019-11-06 14:00 → 2019-11-11 14:00 (+5d) |  |  | 41.5d → 41d | 49 → 53 | resources 待定 → 杨朝辉 |
| 55 | 批量导入接口 | 2019-11-06 14:00 → 2019-11-01 14:00 A (-5d) | 2019-11-07 14:00 → 2019-11-04 14:00 A (-3d) |  | 0% → 100% | 41.5d → none | 54 → 36 | resources 待定 → 杨朝辉 |
| 56 | 批量导出接口（支持查询条件） | 2019-11-07 14:00 → 2019-11-04 14:00 A (-3d) | 2019-11-08 09:00 → 2019-11-05 09:00 A (-3d) |  | 0% → 100% | 41.5d → none |  | resources 待定 → 杨朝辉 |
| 57 | 启用/停用接口 | 2019-11-08 09:00 → 2019-11-05 09:00 A (-3d) | 2019-11-08 14:00 → 2019-11-05 14:00 A (-3d) |  | 0% → 100% | 41.5d → none |  | resources 待定 → 杨朝辉 |
| 58 | **前端开发** | 2019-11-01 14:00 A | 2019-11-05 09:00 A |  | 0% → 100% | 52.5d → none |  |  |
| 59 | 变更记录审批界面开发 | 2019-11-01 14:00 A | 2019-11-04 09:00 A |  | 0% → 100% | 52.5d → none |  | resources 卢毅 → 莫世坚 |
| 60 | 变更信息详情界面开发 | 2019-11-04 09:00 A | 2019-11-04 14:00 A |  | 0% → 100% | 52.5d → none |  | resources 卢毅 → 莫世坚 |
| 61 | 审批流详情界面开发 | 2019-11-04 14:00 A | 2019-11-05 09:00 A |  | 0% → 100% | 52.5d → none |  | resources 卢毅 → 莫世坚 |
| 62 | **前后端联调** | 2019-11-08 14:00 → 2019-11-11 14:00 (+3d) | 2019-11-12 14:00 → 2019-11-14 14:00 (+2d) | 2d → 3d |  | 41.5d → 41d |  |  |
| 63 | 待审批记录审批接口，审批时往审批历史记录表插入记录，审批通过时通过新增或更新厂商信息表 | 2019-11-08 14:00 → 2019-11-11 14:00 (+3d) | 2019-11-11 09:00 → 2019-11-12 09:00 (+1d) |  |  | 43.5d → 41d | 53 → 54 | resources 刘振兴 → 杨朝辉 |
| 64 | 变更信息详情接口（变更前后记录对比） | 2019-11-11 09:00 → 2019-11-12 09:00 (+1d) | 2019-11-11 14:00 → 2019-11-12 14:00 (+1d) |  |  | 43.5d → 41d |  | resources 刘振兴 → 杨朝辉 |
| 65 | 审批流详情接口（审批的所有过程记录） | 2019-11-08 14:00 → 2019-11-12 14:00 (+4d) | 2019-11-11 09:00 → 2019-11-13 09:00 (+2d) |  |  | 41.5d → 41d | 57 → 64 | resources 待定 → 杨朝辉 |
| 66 | 批量导入接口 | 2019-11-11 09:00 → 2019-11-13 09:00 (+2d) | 2019-11-11 14:00 → 2019-11-13 14:00 (+2d) |  |  | 41.5d → 41d |  | resources 待定 → 杨朝辉 |
| 67 | 批量导出接口（支持查询条件） | 2019-11-11 14:00 → 2019-11-13 14:00 (+2d) | 2019-11-12 09:00 → 2019-11-14 09:00 (+2d) |  |  | 41.5d → 41d |  | resources 待定 → 杨朝辉 |
| 68 | 启用/停用接口 | 2019-11-12 09:00 → 2019-11-14 09:00 (+2d) | 2019-11-12 14:00 → 2019-11-14 14:00 (+2d) |  |  | 41.5d → 41d |  | resources 待定 → 杨朝辉 |
| 69 | **医院管理** | 2019-10-29 14:00 A | 2019-11-18 14:00 → 2019-11-15 09:00 (-3d) | 14d → 12.5d | 0% → 8% | 9d → 43d |  |  |
| 70 | **后端设计** |  | 2019-11-06 14:00 → 2019-11-11 14:00 (+5d) | 6d → 9d |  | 9d → 20.5d |  |  |
| 71 | 表结构设计（现有的医院信息表改为医院信息待审批表，新增医院信息表和医院信息审批历史记录表） |  | 2019-10-31 14:00 → 2019-11-04 14:00 (+4d) | 2d → 4d |  | 9d → 25.5d |  |  |
| 72 | 接口详细设计 | 2019-10-31 14:00 → 2019-11-07 14:00 (+7d) | 2019-11-06 14:00 → 2019-11-11 14:00 (+5d) | 4d → 2d |  | 9d → 14.5d | 71 → 74 | resources 罗荣熙 [50%] → 文超 |
| 73 | **后端开发** |  | 2019-11-15 14:00 → 2019-11-14 14:00 (-1d) | 8d → 7d |  | 42.5d → 3d |  |  |
| 74 | 原医院信息管理代码改造 |  |  |  |  | 43.5d → 14.5d | 51 → 49 |  |
| 75 | 待审批记录审批接口，审批时往审批历史记录表插入记录，审批通过时通过新增或更新医院信息表 | 2019-11-11 14:00 → 2019-11-08 14:00 (-3d) | 2019-11-13 14:00 → 2019-11-12 14:00 (-1d) |  |  | 43.5d → 40.5d | 64 → 436 | resources 刘振兴 → 杨迎 |
| 76 | 变更信息详情接口（变更前后记录对比） | 2019-11-13 14:00 → 2019-11-12 14:00 (-1d) | 2019-11-14 14:00 → 2019-11-13 14:00 (-1d) |  |  | 43.5d → 40.5d |  | resources 刘振兴 → 杨迎 |
| 77 | 审批流详情接口（审批的所有过程记录） | 2019-11-12 14:00 → 2019-11-13 14:00 (+1d) | 2019-11-13 14:00 → 2019-11-14 14:00 (+1d) |  |  | 41.5d → 43.5d | 68 → 76 | resources 待定 → 杨迎 |
| 78 | 批量导入接口 | 2019-11-13 14:00 → 2019-11-08 14:00 (-5d) | 2019-11-14 14:00 → 2019-11-11 14:00 (-3d) |  |  | 41.5d → 0d | 77 → 436 | resources 待定 → 郑海文 |
| 79 | 批量导出接口（支持查询条件） | 2019-11-14 14:00 → 2019-11-11 14:00 (-3d) | 2019-11-15 09:00 → 2019-11-12 09:00 (-3d) |  |  | 41.5d → 0d |  | resources 待定 → 郑海文 |

| ID | Task | Start | Finish | Duration | Complete | Total float | Predecessors | Other |
| --- | --- | --- | --- | --- | --- | --- | --- | --- |
| 80 | 启用/停用接口 | 2019-11-15 09:00 → 2019-11-12 09:00 (-3d) | 2019-11-15 14:00 → 2019-11-12 14:00 (-3d) |  |  | 41.5d → 0d |  | resources 待定 → 郑海文 |
| 81 | **前端开发** | 2019-11-01 14:00 → 2019-11-05 09:00 A (+4d) | 2019-11-05 09:00 → 2019-11-06 14:00 A (+1d) |  | 0% → 100% | 52.5d → none |  |  |
| 82 | 变更记录审批界面开发 | 2019-11-01 14:00 → 2019-11-05 09:00 A (+4d) | 2019-11-04 09:00 → 2019-11-05 14:00 A (+1d) |  | 0% → 100% | 52.5d → none | 36 → 61 |  |
| 83 | 变更信息详情界面开发 | 2019-11-04 09:00 → 2019-11-05 14:00 A (+1d) | 2019-11-04 14:00 → 2019-11-06 09:00 A (+2d) |  | 0% → 100% | 52.5d → none |  |  |
| 84 | 审批流详情界面开发 | 2019-11-04 14:00 → 2019-11-06 09:00 A (+2d) | 2019-11-05 09:00 → 2019-11-06 14:00 A (+1d) |  | 0% → 100% | 52.5d → none |  |  |
| 85 | **前后端联调** | 2019-11-14 14:00 → 2019-11-12 14:00 (-2d) | 2019-11-18 14:00 → 2019-11-15 09:00 (-3d) | 2d → 2.5d |  | 42.5d → 0d |  |  |
| 86 | 待审批记录审批接口，审批时往审批历史记录表插入记录，审批通过时通过新增或更新医院信息表 | 2019-11-14 14:00 → 2019-11-13 14:00 (-1d) | 2019-11-15 09:00 → 2019-11-14 09:00 (-1d) |  |  | 43.5d → 40.5d |  | resources 刘振兴 → 杨迎 |
| 87 | 变更信息详情接口（变更前后记录对比） | 2019-11-15 09:00 → 2019-11-14 09:00 (-1d) | 2019-11-15 14:00 → 2019-11-14 14:00 (-1d) |  |  | 43.5d → 40.5d |  | resources 刘振兴 → 杨迎 |
| 88 | 审批流详情接口（审批的所有过程记录） | 2019-11-15 14:00 → 2019-11-14 14:00 (-1d) | 2019-11-18 09:00 → 2019-11-15 09:00 (-3d) |  |  | 43.5d → 40.5d |  | resources 刘振兴 → 杨迎 |
| 89 | 批量导入接口 | 2019-11-15 14:00 → 2019-11-12 14:00 (-3d) | 2019-11-18 09:00 → 2019-11-13 09:00 (-5d) |  |  | 41.5d → 0d |  | resources 待定 → 郑海文 |
| 90 | 批量导出接口（支持查询条件） | 2019-11-18 09:00 → 2019-11-13 09:00 (-5d) | 2019-11-18 14:00 → 2019-11-13 14:00 (-5d) |  |  | 43d → 44.5d |  | resources 待定 → 郑海文 |
| 91 | 启用/停用接口 | 2019-11-18 09:00 → 2019-11-13 09:00 (-5d) | 2019-11-18 14:00 → 2019-11-13 14:00 (-5d) |  |  | 41.5d → 0d |  | resources 待定 → 郑海文 |
| 92 | **供应商管理** | 2019-11-06 14:00 → 2019-11-04 14:00 A (-2d) | 2019-11-18 09:00 → 2019-11-19 14:00 (+1d) | 7.5d → 11d | 0% → 7% | 3d → 40.5d |  |  |
| 93 | **后端设计** | 2019-11-06 14:00 → 2019-11-04 14:00 (-2d) | 2019-11-11 14:00 → 2019-11-14 14:00 (+3d) | 3d → 8d |  | 9d → 25.5d |  |  |
| 94 | 表结构设计（现有的供应商信息表改为供应商信息待审批表，新增供应商信息表和供应商信息审批历史记录表） | 2019-11-06 14:00 → 2019-11-04 14:00 (-2d) |  | 2d → 4d |  | 9d → 25.5d | 72 → 71 |  |
| 95 | 接口详细设计 | 2019-11-07 14:00 → 2019-11-08 14:00 (+1d) | 2019-11-11 14:00 → 2019-11-14 14:00 (+3d) | 2d → 4d |  | 43.5d → 25.5d | 74 → 94 | resources 文超 → 罗荣熙 [50%] |
| 96 | **后端开发** |  | 2019-11-15 14:00 → 2019-11-18 14:00 (+3d) | 4d → 5d |  | 0d → 2d |  |  |
| 97 | 原供应商信息管理代码改造 |  | 2019-11-12 14:00 → 2019-11-13 14:00 (+1d) | 1d → 2d |  | 43.5d → 14.5d | 95 → 72 |  |
| 98 | 待审批记录审批接口，审批时往审批历史记录表插入记录，审批通过时通过新增或更新供应商信息表 | 2019-11-12 14:00 → 2019-11-14 14:00 (+2d) | 2019-11-14 14:00 → 2019-11-18 14:00 (+4d) |  |  | 43.5d → 41d | 97 → 68 | resources 文超 → 杨朝辉 |
| 99 | 变更信息详情接口（变更前后记录对比） | 2019-11-14 14:00 → 2019-11-15 09:00 (+1d) | 2019-11-15 14:00 → 2019-11-18 09:00 (+3d) |  |  | 44d → 40.5d | 98 → 88 | resources 文超 → 杨迎 |
| 100 | 审批流详情接口（审批的所有过程记录） | 2019-11-11 14:00 → 2019-11-13 14:00 (+2d) | 2019-11-12 14:00 → 2019-11-14 14:00 (+2d) |  |  |  | 436 → 91 | resources 杨迎 → 郑海文 |
| 101 | 批量导入接口 | 2019-11-12 14:00 → 2019-11-14 14:00 (+2d) | 2019-11-13 14:00 → 2019-11-15 14:00 (+2d) |  |  |  |  | resources 杨迎 → 郑海文 |
| 102 | 批量导出接口（支持查询条件） | 2019-11-13 14:00 → 2019-11-15 14:00 (+2d) | 2019-11-14 09:00 → 2019-11-18 09:00 (+4d) |  |  |  |  | resources 杨迎 → 郑海文 |
| 103 | 启用/停用接口 | 2019-11-14 09:00 → 2019-11-18 09:00 (+4d) | 2019-11-14 14:00 → 2019-11-18 14:00 (+4d) |  |  |  |  | resources 杨迎 → 郑海文 |
| 104 | **前端开发** | 2019-11-12 14:00 → 2019-11-06 14:00 A (-6d) | 2019-11-14 09:00 → 2019-11-08 09:00 A (-6d) |  | 0% → 100% | 45.5d → none |  |  |
| 105 | 变更记录审批界面开发 | 2019-11-12 14:00 → 2019-11-06 14:00 A (-6d) | 2019-11-13 09:00 → 2019-11-07 09:00 A (-6d) |  | 0% → 100% | 45.5d → none | 68 → 84 | resources 卢毅 → 莫世坚 |
| 106 | 变更信息详情界面开发 | 2019-11-13 09:00 → 2019-11-07 09:00 A (-6d) | 2019-11-13 14:00 → 2019-11-07 14:00 A (-6d) |  | 0% → 100% | 45.5d → none |  | resources 卢毅 → 莫世坚 |
| 107 | 审批流详情界面开发 | 2019-11-13 14:00 → 2019-11-07 14:00 A (-6d) | 2019-11-14 09:00 → 2019-11-08 09:00 A (-6d) |  | 0% → 100% | 45.5d → none |  | resources 卢毅 → 莫世坚 |
| 108 | **前后端联调** | 2019-11-14 14:00 → 2019-11-18 09:00 (+4d) | 2019-11-18 09:00 → 2019-11-19 14:00 (+1d) |  |  | 0d → 0.5d |  |  |
| 109 | 待审批记录审批接口，审批时往审批历史记录表插入记录，审批通过时通过新增或更新供应商信息表 | 2019-11-14 14:00 → 2019-11-18 14:00 (+4d) | 2019-11-15 09:00 → 2019-11-19 09:00 (+4d) |  |  | 43.5d → 41d |  | resources 文超 → 杨朝辉 |
| 110 | 变更信息详情接口（变更前后记录对比） | 2019-11-15 09:00 → 2019-11-18 09:00 (+3d) | 2019-11-15 14:00 → 2019-11-18 14:00 (+3d) |  |  | 43.5d → 40.5d | 109 → 99 | resources 文超 → 杨迎 |
| 111 | 审批流详情接口（审批的所有过程记录） | 2019-11-15 14:00 → 2019-11-18 14:00 (+3d) | 2019-11-18 09:00 → 2019-11-19 09:00 (+1d) |  |  | 43.5d → 40.5d |  | resources 文超 → 杨迎 |
| 112 | 批量导入接口 | 2019-11-14 14:00 → 2019-11-19 09:00 (+5d) | 2019-11-15 09:00 → 2019-11-19 14:00 (+4d) |  |  | 0d → 40.5d | 103 → 111 |  |
| 113 | 批量导出接口（支持查询条件） | 2019-11-15 09:00 → 2019-11-18 14:00 (+3d) | 2019-11-15 14:00 → 2019-11-19 09:00 (+4d) |  |  |  | 112 → 103 | resources 杨迎 → 郑海文 |
| 114 | 启用/停用接口 | 2019-11-15 14:00 → 2019-11-19 09:00 (+4d) | 2019-11-18 09:00 → 2019-11-19 14:00 (+1d) |  |  |  |  | resources 杨迎 → 郑海文 |
| 115 | 研发人员自测 | 2019-11-18 09:00 → 2019-11-19 14:00 (+1d) | 2019-11-21 09:00 → 2019-11-22 14:00 (+1d) |  |  |  |  |  |
| 116 | **测试介入** | 2019-11-21 09:00 → 2019-11-22 14:00 (+1d) | 2019-11-28 09:00 → 2019-11-29 14:00 (+1d) |  |  | 24d → 32.5d |  |  |
| 117 | 封闭测试 | 2019-11-21 09:00 → 2019-11-22 14:00 (+1d) | 2019-11-25 09:00 → 2019-11-26 14:00 (+1d) |  |  | 24d → 32.5d |  |  |
| 118 | bug修复回归测试 | 2019-11-25 09:00 → 2019-11-26 14:00 (+1d) | 2019-11-28 09:00 → 2019-11-29 14:00 (+1d) |  |  | 24d → 32.5d |  |  |
| 128 | **商品管理** | 2019-11-08 14:00 → 2019-11-13 14:00 (+5d) | 2019-12-25 14:00 → 2019-12-26 09:00 (+1d) | 33d → 30.5d |  | 8.5d → 7d |  |  |
| 129 | **平台商品** | 2019-11-08 14:00 → 2019-11-13 14:00 (+5d) | 2019-12-09 14:00 → 2019-12-10 14:00 (+1d) | 21d → 19d |  | 8.5d → 7d |  |  |
| 130 | **药品管理** | 2019-11-08 14:00 → 2019-11-13 14:00 (+5d) | 2019-12-02 14:00 → 2019-12-09 09:00 (+7d) | 16d → 17.5d |  | 8.5d → 14.5d |  |  |
| 131 | **后端设计** | 2019-11-08 14:00 → 2019-11-14 14:00 (+6d) | 2019-11-20 14:00 → 2019-11-26 14:00 (+6d) |  |  | 9d → 25.5d |  |  |
| 132 | 表结构设计（现有的平台药品信息表改为平台药品信息待审批表，新增平台药品信息表和平台药品审批历史记录表） | 2019-11-08 14:00 → 2019-11-14 14:00 (+6d) | 2019-11-12 14:00 → 2019-11-18 14:00 (+6d) |  |  | 9d → 25.5d | 94 → 95 |  |
| 133 | 接口详细设计 | 2019-11-12 14:00 → 2019-11-18 14:00 (+6d) | 2019-11-20 14:00 → 2019-11-26 14:00 (+6d) |  |  | 9d → 25.5d |  |  |
| 134 | **后端开发** | 2019-11-21 09:00 → 2019-11-13 14:00 (-8d) | 2019-11-28 09:00 → 2019-12-04 09:00 (+6d) | 5d → 14.5d |  | 0d → 14.5d |  |  |
| 135 | 原平台药品信息管理代码改造 | 2019-11-21 09:00 → 2019-11-13 14:00 (-8d) | 2019-11-25 09:00 → 2019-11-15 14:00 (-10d) |  |  |  | 115 → 97 |  |
| 136 | 待审批记录审批接口，审批时往审批历史记录表插入记录，审批通过时通过新增或更新平台药品信息表 | 2019-11-25 09:00 → 2019-11-22 14:00 (-3d) | 2019-11-27 09:00 → 2019-11-26 14:00 (-1d) |  |  | 14.5d → 22d | 135 → 115 | resources 文超 → 杨迎 |
| 137 | 变更信息详情接口 | 2019-11-27 09:00 → 2019-11-26 14:00 (-1d) | 2019-11-28 09:00 → 2019-11-27 14:00 (-1d) |  |  | 14.5d → 22d |  | resources 文超 → 杨迎 |
| 138 | 审批流详情接口（审批的所有过程记录） | 2019-11-21 09:00 → 2019-11-27 14:00 (+6d) | 2019-11-22 09:00 → 2019-11-28 14:00 (+6d) |  |  | 0d → 22d | 115 → 137 |  |
| 139 | 药品商品信息批量导入接口 | 2019-11-22 09:00 → 2019-11-28 14:00 (+6d) | 2019-11-26 09:00 → 2019-12-02 14:00 (+6d) |  |  | 0d → 22d |  |  |
| 140 | 药品商品信息批量导出功能（支持条件查询） | 2019-11-26 09:00 → 2019-12-02 14:00 (+6d) | 2019-11-27 09:00 → 2019-12-03 14:00 (+6d) |  |  | 0d → 22d |  |  |
| 141 | 启用/停用接口 | 2019-11-27 09:00 → 2019-12-03 14:00 (+6d) | 2019-11-27 14:00 → 2019-12-04 09:00 (+7d) |  |  | 0d → 22d |  |  |
| 142 | **前端开发** | 2019-11-18 14:00 → 2019-11-22 14:00 (+4d) | 2019-11-20 09:00 → 2019-11-26 09:00 (+6d) |  |  | 41.5d → 33d |  |  |
| 143 | 变更记录审批界面开发 | 2019-11-18 14:00 → 2019-11-22 14:00 (+4d) | 2019-11-19 09:00 → 2019-11-25 09:00 (+6d) |  |  | 40.5d → 33d | 91 → 115 |  |
| 144 | 变更信息详情界面开发 | 2019-11-19 09:00 → 2019-11-25 09:00 (+6d) | 2019-11-19 14:00 → 2019-11-25 14:00 (+6d) |  |  | 40.5d → 33d |  |  |
| 145 | 审批流详情界面开发 | 2019-11-19 14:00 → 2019-11-25 14:00 (+6d) | 2019-11-20 09:00 → 2019-11-26 09:00 (+6d) |  |  | 40.5d → 33d |  |  |
| 146 | **前后端联调** | 2019-11-27 14:00 → 2019-12-04 09:00 (+7d) | 2019-12-02 14:00 → 2019-12-09 09:00 (+7d) |  |  | 0d → 22d |  |  |
| 147 | 待审批记录审批接口，审批时往审批历史记录表插入记录，审批通过时通过新增或更新平台药品信息表 | 2019-11-27 14:00 → 2019-12-04 09:00 (+7d) | 2019-11-28 09:00 → 2019-12-04 14:00 (+6d) |  |  | 0d → 22d |  |  |
| 148 | 变更信息详情接口 | 2019-11-28 09:00 → 2019-12-04 14:00 (+6d) | 2019-11-28 14:00 → 2019-12-05 09:00 (+7d) |  |  | 0d → 22d |  |  |
| 149 | 审批流详情接口（审批的所有过程记录） | 2019-11-28 14:00 → 2019-12-05 09:00 (+7d) | 2019-11-29 09:00 → 2019-12-05 14:00 (+6d) |  |  | 0d → 22d |  |  |
| 150 | 药品商品信息批量导入接口 | 2019-11-29 09:00 → 2019-12-05 14:00 (+6d) | 2019-11-29 14:00 → 2019-12-06 09:00 (+7d) |  |  | 0d → 22d |  |  |
| 151 | 药品商品信息批量导出功能（支持条件查询） | 2019-11-29 14:00 → 2019-12-06 09:00 (+7d) | 2019-12-02 09:00 → 2019-12-06 14:00 (+4d) |  |  | 0d → 22d |  |  |
| 152 | 启用/停用接口 | 2019-12-02 09:00 → 2019-12-06 14:00 (+4d) | 2019-12-02 14:00 → 2019-12-09 09:00 (+7d) |  |  | 0d → 22d |  |  |
| 153 | **试剂管理** | 2019-11-20 14:00 → 2019-11-15 14:00 (-5d) | 2019-12-06 14:00 → 2019-12-09 09:00 (+3d) | 12d → 15.5d |  | 9d → 14.5d |  |  |
| 154 | **后端设计** | 2019-11-20 14:00 → 2019-11-26 14:00 (+6d) | 2019-12-02 14:00 → 2019-12-06 14:00 (+4d) |  |  | 9d → 25.5d |  |  |
| 155 | 表结构设计（现有的平台试剂信息表改为平台试剂信息待审批表，新增平台试剂信息表和平台试剂审批历史记录表） | 2019-11-20 14:00 → 2019-11-26 14:00 (+6d) | 2019-11-22 14:00 → 2019-11-28 14:00 (+6d) |  |  | 9d → 25.5d |  |  |
| 156 | 接口详细设计 | 2019-11-22 14:00 → 2019-11-28 14:00 (+6d) | 2019-12-02 14:00 → 2019-12-06 14:00 (+4d) |  |  | 9d → 25.5d |  |  |
| 157 | **后端开发** | 2019-11-21 09:00 → 2019-11-15 14:00 (-6d) | 2019-12-03 14:00 → 2019-12-04 09:00 (+1d) | 8.5d → 12.5d |  | 24.5d → 14.5d |  |  |
| 158 | 原平台试剂信息管理代码改造 | 2019-11-21 09:00 → 2019-11-15 14:00 (-6d) | 2019-11-25 09:00 → 2019-11-19 14:00 (-6d) |  |  | 26d → 14.5d | 115 → 135 | resources 刘振兴 → 文超 |

| ID | Task | Start | Finish | Duration | Total float | Predecessors | Other |
| --- | --- | --- | --- | --- | --- | --- | --- |
| 159 | 待审批记录审批接口，审批时往审批历史记录表插入记录，审批通过时通过新增或更新平台试剂信息表 | 2019-11-25 09:00 → 2019-11-22 14:00 (-3d) | 2019-11-27 09:00 → 2019-11-26 14:00 (-1d) |  | 26d → 22d | 158 → 115 | resources 刘振兴 → 郑海文 |
| 160 | 变更信息详情接口 | 2019-11-27 09:00 → 2019-11-26 14:00 (-1d) | 2019-11-28 09:00 → 2019-11-27 14:00 (-1d) |  | 26d → 22d |  | resources 刘振兴 → 郑海文 |
| 161 | 审批流详情接口（审批的所有过程记录） | 2019-11-28 09:00 → 2019-11-27 14:00 (-1d) | 2019-11-29 09:00 → 2019-11-28 14:00 (-1d) |  | 26d → 22d |  | resources 刘振兴 → 郑海文 |
| 162 | 试剂商品信息批量导入接口 | 2019-11-28 09:00 → 2019-11-28 14:00 | 2019-12-02 09:00 → 2019-12-02 14:00 |  | 20d → 22d | 118 → 161 | resources 待定 → 郑海文 |
| 163 | 试剂商品信息批量导出功能（支持条件查询） | 2019-12-02 09:00 → 2019-12-02 14:00 | 2019-12-03 09:00 → 2019-12-03 14:00 |  | 20d → 22d |  | resources 待定 → 郑海文 |
| 164 | 启用/停用接口 | 2019-12-03 09:00 → 2019-12-03 14:00 | 2019-12-03 14:00 → 2019-12-04 09:00 (+1d) |  | 20d → 22d |  | resources 待定 → 郑海文 |
| 165 | **前端开发** | 2019-11-28 09:00 → 2019-11-26 09:00 (-2d) | 2019-11-29 14:00 → 2019-11-27 14:00 (-2d) |  | 34d → 33d |  |  |
| 166 | 变更记录审批界面开发 | 2019-11-28 09:00 → 2019-11-26 09:00 (-2d) | 2019-11-28 14:00 → 2019-11-26 14:00 (-2d) |  |  | 118 → 145 | resources 卢毅 → 莫世坚 |
| 167 | 变更信息详情界面开发 | 2019-11-28 14:00 → 2019-11-26 14:00 (-2d) | 2019-11-29 09:00 → 2019-11-27 09:00 (-2d) |  |  |  | resources 卢毅 → 莫世坚 |
| 168 | 审批流详情界面开发 | 2019-11-29 09:00 → 2019-11-27 09:00 (-2d) | 2019-11-29 14:00 → 2019-11-27 14:00 (-2d) |  |  |  | resources 卢毅 → 莫世坚 |
| 169 | **前后端联调** | 2019-12-03 14:00 → 2019-12-04 09:00 (+1d) | 2019-12-06 14:00 → 2019-12-09 09:00 (+3d) |  | 24d → 22d |  |  |
| 170 | 待审批记录审批接口，审批时往审批历史记录表插入记录，审批通过时通过新增或更新平台试剂信息表 | 2019-12-03 14:00 → 2019-12-04 09:00 (+1d) | 2019-12-04 09:00 → 2019-12-04 14:00 |  | 20d → 22d |  | resources 待定 → 郑海文 |
| 171 | 变更信息详情接口 | 2019-12-04 09:00 → 2019-12-04 14:00 | 2019-12-04 14:00 → 2019-12-05 09:00 (+1d) |  | 20d → 22d |  | resources 待定 → 郑海文 |
| 172 | 审批流详情接口（审批的所有过程记录） | 2019-12-04 14:00 → 2019-12-05 09:00 (+1d) | 2019-12-05 09:00 → 2019-12-05 14:00 |  | 20d → 22d |  | resources 待定 → 郑海文 |
| 173 | 试剂商品信息批量导入接口 | 2019-12-05 09:00 → 2019-12-05 14:00 | 2019-12-05 14:00 → 2019-12-06 09:00 (+1d) |  | 20d → 22d |  | resources 待定 → 郑海文 |
| 174 | 试剂商品信息批量导出功能（支持条件查询） | 2019-12-05 14:00 → 2019-12-06 09:00 (+1d) | 2019-12-06 09:00 → 2019-12-06 14:00 |  | 20d → 22d |  | resources 待定 → 郑海文 |
| 175 | 启用/停用接口 | 2019-12-06 09:00 → 2019-12-06 14:00 | 2019-12-06 14:00 → 2019-12-09 09:00 (+3d) |  | 20d → 22d |  | resources 待定 → 郑海文 |
| 176 | **耗材管理** | 2019-11-28 09:00 → 2019-11-19 14:00 (-9d) | 2019-12-09 14:00 → 2019-12-10 14:00 (+1d) | 7.5d → 15d | 2.5d → 3d |  |  |
| 177 | **后端设计** | 2019-11-29 09:00 → 2019-11-21 14:00 (-8d) | 2019-12-04 14:00 → 2019-12-10 14:00 (+6d) | 3.5d → 13d | 10.5d → 25.5d |  |  |
| 178 | 表结构设计（现有的平台耗材信息表改为平台耗材信息待审批表，新增平台耗材信息表和平台耗材审批历史记录表） | 2019-12-02 14:00 → 2019-12-06 14:00 (+4d) | 2019-12-04 14:00 → 2019-12-10 14:00 (+6d) |  | 9d → 25.5d |  |  |
| 179 | 接口详细设计 | 2019-11-29 09:00 → 2019-11-21 14:00 (-8d) | 2019-12-04 09:00 → 2019-11-26 14:00 (-8d) |  | 26d → 35.5d | 161 → 181 | resources 刘振兴 → 文超 |
| 180 | **后端开发** | 2019-11-28 09:00 → 2019-11-19 14:00 (-9d) | 2019-12-06 09:00 → 2019-12-04 09:00 (-2d) | 6d → 10.5d | 2.5d → 3d |  |  |
| 181 | 原平台耗材信息管理代码改造 | 2019-11-28 09:00 → 2019-11-19 14:00 (-9d) | 2019-12-02 09:00 → 2019-11-21 14:00 (-11d) |  |  | 137 → 158 |  |
| 182 | 待审批记录审批接口，审批时往审批历史记录表插入记录，审批通过时通过新增或更新平台试剂信息表 | 2019-12-02 09:00 → 2019-11-22 14:00 (-10d) | 2019-12-04 09:00 → 2019-11-26 14:00 (-8d) |  | 14.5d → 0d | 181 → 115 | resources 文超 → 杨朝辉 |
| 183 | 变更信息详情接口 | 2019-12-02 14:00 → 2019-11-26 14:00 (-6d) | 2019-12-03 14:00 → 2019-11-27 14:00 (-6d) |  |  | 152 → 182 | resources 杨迎 → 杨朝辉 |
| 184 | 审批流详情接口（审批的所有过程记录） | 2019-12-03 14:00 → 2019-11-27 14:00 (-6d) | 2019-12-04 14:00 → 2019-11-28 14:00 (-6d) |  |  |  | resources 杨迎 → 杨朝辉 |
| 185 | 耗材商品信息批量导入接口 | 2019-12-04 09:00 → 2019-11-28 14:00 (-6d) | 2019-12-06 09:00 → 2019-12-02 14:00 (-4d) |  | 26d → 0d | 179 → 184 | resources 刘振兴 → 杨朝辉 |
| 186 | 耗材商品信息批量导出功能（支持条件查询） | 2019-12-04 14:00 → 2019-12-02 14:00 (-2d) | 2019-12-05 14:00 → 2019-12-03 14:00 (-2d) |  |  | 184 → 185 | resources 杨迎 → 杨朝辉 |
| 187 | 启用/停用接口 | 2019-12-05 14:00 → 2019-12-03 14:00 (-2d) | 2019-12-06 09:00 → 2019-12-04 09:00 (-2d) |  |  |  | resources 杨迎 → 杨朝辉 |
| 188 | **前端开发** | 2019-12-02 14:00 → 2019-11-27 14:00 (-5d) | 2019-12-04 09:00 → 2019-11-29 09:00 (-5d) |  | 31.5d → 33d |  |  |
| 189 | 变更记录审批界面开发 | 2019-12-02 14:00 → 2019-11-27 14:00 (-5d) | 2019-12-03 09:00 → 2019-11-28 09:00 (-5d) |  | 30.5d → 33d | 152 → 168 |  |
| 190 | 变更信息详情界面开发 | 2019-12-03 09:00 → 2019-11-28 09:00 (-5d) | 2019-12-03 14:00 → 2019-11-28 14:00 (-5d) |  | 30.5d → 33d |  |  |
| 191 | 审批流详情界面开发 | 2019-12-03 14:00 → 2019-11-28 14:00 (-5d) | 2019-12-04 09:00 → 2019-11-29 09:00 (-5d) |  | 30.5d → 33d |  |  |
| 192 | **前后端联调** | 2019-12-06 09:00 → 2019-12-04 09:00 (-2d) | 2019-12-09 14:00 → 2019-12-09 09:00 | 1.5d → 3d |  |  |  |
| 193 | 待审批记录审批接口，审批时往审批历史记录表插入记录，审批通过时通过新增或更新平台试剂信息表 | 2019-12-06 09:00 → 2019-12-04 09:00 (-2d) | 2019-12-06 14:00 → 2019-12-04 14:00 (-2d) |  | 26d → 0d | 185 → 187 | resources 刘振兴 → 杨朝辉 |
| 194 | 变更信息详情接口 | 2019-12-06 14:00 → 2019-12-04 14:00 (-2d) | 2019-12-09 09:00 → 2019-12-05 09:00 (-4d) |  | 26d → 0d |  | resources 刘振兴 → 杨朝辉 |
| 195 | 审批流详情接口（审批的所有过程记录） | 2019-12-09 09:00 → 2019-12-05 09:00 (-4d) | 2019-12-09 14:00 → 2019-12-05 14:00 (-4d) |  | 26d → 0d |  | resources 刘振兴 → 杨朝辉 |
| 196 | 耗材商品信息批量导入接口 | 2019-12-06 09:00 → 2019-12-05 14:00 (-1d) | 2019-12-06 14:00 → 2019-12-06 09:00 |  |  | 187 → 195 | resources 杨迎 → 杨朝辉 |
| 197 | 耗材商品信息批量导出功能（支持条件查询） | 2019-12-06 14:00 → 2019-12-06 09:00 | 2019-12-09 09:00 → 2019-12-06 14:00 (-3d) |  |  |  | resources 杨迎 → 杨朝辉 |
| 198 | 启用/停用接口 | 2019-12-09 09:00 → 2019-12-06 14:00 (-3d) | 2019-12-09 14:00 → 2019-12-09 09:00 |  |  |  | resources 杨迎 → 杨朝辉 |
| 199 | **供应商商品** | 2019-12-04 09:00 → 2019-11-21 14:00 (-13d) | 2019-12-13 14:00 → 2019-12-16 09:00 (+3d) | 7.5d → 16.5d | 3.5d → 11.5d |  |  |
| 200 | **药品管理** | 2019-12-04 09:00 → 2019-11-21 14:00 (-13d) | 2019-12-12 14:00 → 2019-12-16 09:00 (+4d) | 6.5d → 16.5d | 9.5d → 14.5d |  |  |
| 201 | **后端设计** | 2019-12-04 09:00 → 2019-11-21 14:00 (-13d) | 2019-12-05 14:00 → 2019-11-25 14:00 (-10d) | 1.5d → 2d | 9.5d → 14.5d |  |  |
| 202 | 表结构设计调整（供应商药品信息主表添加“阳光采购平台编码”字段） | 2019-12-04 14:00 → 2019-11-21 14:00 (-13d) | 2019-12-05 14:00 → 2019-11-22 14:00 (-13d) |  | 9d → 14.5d | 178 → 181 | resources 罗荣熙 [50%] → 文超 |
| 203 | 接口详细设计 | 2019-12-04 09:00 → 2019-11-22 14:00 (-12d) | 2019-12-05 09:00 → 2019-11-25 14:00 (-10d) |  |  | 182 → 202 |  |
| 204 | **后端开发** | 2019-12-05 09:00 → 2019-12-09 09:00 (+4d) | 2019-12-11 14:00 → 2019-12-13 09:00 (+2d) | 4.5d → 4d | 15.5d → 22d |  |  |
| 205 | “商品属性”字段改为非必填 | 2019-12-05 09:00 → 2019-12-09 09:00 (+4d) | 2019-12-05 14:00 → 2019-12-09 14:00 (+4d) |  | 14.5d → 22d | 203 → 152 | resources 文超 → 杨迎 |
| 206 | 商品名称允许重复，批准文号/注册证号不允许重复 | 2019-12-05 14:00 → 2019-12-09 14:00 (+4d) | 2019-12-06 09:00 → 2019-12-10 09:00 (+4d) |  | 14.5d → 22d |  | resources 文超 → 杨迎 |
| 207 | 药品信息批量导入接口 | 2019-12-06 14:00 → 2019-12-10 09:00 (+4d) | 2019-12-10 14:00 → 2019-12-12 09:00 (+2d) |  | 20d → 22d | 175 → 206 | resources 待定 → 杨迎 |
| 208 | 药品信息批量导出接口（支持条件查询） | 2019-12-10 14:00 → 2019-12-12 09:00 (+2d) | 2019-12-11 14:00 → 2019-12-13 09:00 (+2d) |  | 20d → 22d |  | resources 待定 → 杨迎 |
| 209 | **前后端联调** | 2019-12-11 14:00 → 2019-12-13 09:00 (+2d) | 2019-12-12 14:00 → 2019-12-16 09:00 (+4d) |  | 24d → 22d |  |  |
| 210 | 药品信息批量导入接口 | 2019-12-11 14:00 → 2019-12-13 09:00 (+2d) | 2019-12-12 09:00 → 2019-12-13 14:00 (+1d) |  | 20d → 22d |  | resources 待定 → 杨迎 |
| 211 | 药品信息批量导出接口（支持条件查询） | 2019-12-12 09:00 → 2019-12-13 14:00 (+1d) | 2019-12-12 14:00 → 2019-12-16 09:00 (+4d) |  | 20d → 22d |  | resources 待定 → 杨迎 |
| 212 | **试剂管理** | 2019-12-05 14:00 → 2019-11-25 14:00 (-10d) | 2019-12-13 14:00 → 2019-12-16 09:00 (+3d) | 6d → 14.5d | 9d → 14.5d |  |  |
| 213 | **后端设计** | 2019-12-05 14:00 → 2019-11-25 14:00 (-10d) | 2019-12-09 09:00 → 2019-11-27 14:00 (-12d) | 1.5d → 2d | 9d → 14.5d |  |  |
| 214 | 表结构设计调整（供应商药品信息主表添加“阳光采购平台编码”字段） | 2019-12-05 14:00 → 2019-11-25 14:00 (-10d) | 2019-12-06 14:00 → 2019-11-26 14:00 (-10d) |  | 9d → 14.5d | 202 → 203 | resources 罗荣熙 [50%] → 文超 |
| 215 | 接口详细设计 | 2019-12-06 09:00 → 2019-11-26 14:00 (-10d) | 2019-12-09 09:00 → 2019-11-27 14:00 (-12d) |  | 15.5d → 14.5d | 206 → 214 |  |
| 216 | **后端开发** | 2019-12-09 14:00 → 2019-12-09 09:00 | 2019-12-13 14:00 → 2019-12-13 09:00 |  | 24d → 22d |  |  |
| 217 | “商品属性”字段改为非必填 | 2019-12-09 14:00 → 2019-12-09 09:00 | 2019-12-10 09:00 → 2019-12-09 14:00 (-1d) |  | 24d → 22d | 198 → 175 | resources 杨迎 → 郑海文 |
| 218 | 商品名称允许重复，批准文号/注册证号不允许重复 | 2019-12-10 09:00 → 2019-12-09 14:00 (-1d) | 2019-12-10 14:00 → 2019-12-10 09:00 |  | 24d → 22d |  | resources 杨迎 → 郑海文 |
| 219 | 试剂信息批量导入接口 | 2019-12-10 14:00 → 2019-12-10 09:00 | 2019-12-12 14:00 → 2019-12-12 09:00 |  | 24d → 22d |  | resources 杨迎 → 郑海文 |
| 220 | 试剂信息批量导出接口（支持条件查询） | 2019-12-12 14:00 → 2019-12-12 09:00 | 2019-12-13 14:00 → 2019-12-13 09:00 |  | 24d → 22d |  | resources 杨迎 → 郑海文 |
| 221 | **前后端联调** | 2019-12-12 14:00 → 2019-12-13 09:00 (+1d) | 2019-12-13 14:00 → 2019-12-16 09:00 (+3d) |  | 24d → 22d |  |  |
| 222 | “药品本位码”字段改为“全球唯一码” | 2019-12-12 14:00 → 2019-12-13 09:00 (+1d) | 2019-12-13 09:00 → 2019-12-13 14:00 |  | 24d → 22d | 211 → 220 | resources 待定 → 郑海文 |
| 223 | 试剂信息批量导入接口 | 2019-12-13 09:00 → 2019-12-13 14:00 | 2019-12-13 14:00 → 2019-12-16 09:00 (+3d) |  | 24d → 22d |  | resources 待定 → 郑海文 |
| 224 | 试剂信息批量导出接口（支持条件查询） | 2019-12-13 09:00 → 2019-12-13 14:00 | 2019-12-13 14:00 → 2019-12-16 09:00 (+3d) |  | 24d → 22d |  | resources 待定 → 郑海文 |
| 225 | **耗材管理** | 2019-12-06 14:00 → 2019-11-27 14:00 (-9d) | 2019-12-13 14:00 → 2019-12-16 09:00 (+3d) | 5d → 12.5d | 1d → 7.5d |  |  |
| 226 | **后端设计** | 2019-12-06 14:00 → 2019-11-27 14:00 (-9d) | 2019-12-10 09:00 → 2019-11-29 14:00 (-11d) | 1.5d → 2d | 9d → 14.5d |  |  |
| 227 | 表结构设计调整（供应商药品信息主表添加“阳光采购平台编码”字段） | 2019-12-06 14:00 → 2019-11-27 14:00 (-9d) | 2019-12-09 14:00 → 2019-11-28 14:00 (-11d) |  | 9d → 14.5d | 214 → 215 | resources 罗荣熙 [50%] → 文超 |
| 228 | 接口详细设计 | 2019-12-09 09:00 → 2019-11-28 14:00 (-11d) | 2019-12-10 09:00 → 2019-11-29 14:00 (-11d) |  | 15.5d → 20.5d | 215 → 227 |  |

| ID | Task | Start | Finish | Duration | Total float | Predecessors | Other |
| --- | --- | --- | --- | --- | --- | --- | --- |
| 229 | **后端开发** | 2019-12-09 14:00 → 2019-12-09 09:00 | 2019-12-12 14:00 → 2019-12-13 09:00 (+1d) | 3d → 4d |  |  |  |
| 230 | “商品属性”字段改为非必填 | 2019-12-09 14:00 → 2019-12-09 09:00 | 2019-12-10 09:00 → 2019-12-09 14:00 (-1d) |  | 27d → 0d | 195 → 198 | resources 刘振兴 → 杨朝辉 |
| 231 | 商品名称允许重复，批准文号/注册证号不允许重复 | 2019-12-10 09:00 → 2019-12-09 14:00 (-1d) | 2019-12-10 14:00 → 2019-12-10 09:00 |  | 27d → 0d |  | resources 刘振兴 → 杨朝辉 |
| 232 | 耗材信息批量导入接口 | 2019-12-09 14:00 → 2019-12-10 09:00 (+1d) | 2019-12-11 14:00 → 2019-12-12 09:00 (+1d) |  |  | 198 → 231 | resources 刘振兴 → 杨朝辉 |
| 233 | 耗材信息批量导出接口（支持条件查询） | 2019-12-11 14:00 → 2019-12-12 09:00 (+1d) | 2019-12-12 14:00 → 2019-12-13 09:00 (+1d) |  |  |  | resources 刘振兴 → 杨朝辉 |
| 234 | **前后端联调** | 2019-12-12 14:00 → 2019-12-13 09:00 (+1d) | 2019-12-13 14:00 → 2019-12-16 09:00 (+3d) |  |  |  |  |
| 235 | 耗材信息批量导入接口 | 2019-12-12 14:00 → 2019-12-13 09:00 (+1d) | 2019-12-13 09:00 → 2019-12-13 14:00 |  |  |  | resources 刘振兴 → 杨朝辉 |
| 236 | 耗材信息批量导出接口（支持条件查询） | 2019-12-13 09:00 → 2019-12-13 14:00 | 2019-12-13 14:00 → 2019-12-16 09:00 (+3d) |  |  |  | resources 刘振兴 → 杨朝辉 |
| 237 | **供应目录下发** | 2019-12-10 09:00 → 2019-11-29 14:00 (-11d) | 2019-12-12 09:00 → 2019-12-03 14:00 (-9d) |  | 15.5d → 20.5d |  |  |
| 238 | **后端开发** | 2019-12-10 09:00 → 2019-11-29 14:00 (-11d) | 2019-12-11 09:00 → 2019-12-02 14:00 (-9d) |  | 15.5d → 20.5d |  |  |
| 239 | 供应商商品目录下发转换任务（从MCP业务表到临时表），增加“阳光采购平台编码”字段下发 | 2019-12-10 09:00 → 2019-11-29 14:00 (-11d) | 2019-12-11 09:00 → 2019-12-02 14:00 (-9d) |  | 15.5d → 20.5d |  |  |
| 240 | **外部系统联调** | 2019-12-11 09:00 → 2019-12-02 14:00 (-9d) | 2019-12-12 09:00 → 2019-12-03 14:00 (-9d) |  | 15.5d → 20.5d |  |  |
| 241 | 供应商商品目录下发（ETL数据同步，从MCP临时表到DSC） | 2019-12-11 09:00 → 2019-12-02 14:00 (-9d) | 2019-12-12 09:00 → 2019-12-03 14:00 (-9d) |  | 15.5d → 20.5d |  |  |
| 242 | 研发人员自测 | 2019-12-13 14:00 → 2019-12-16 09:00 (+3d) | 2019-12-18 14:00 → 2019-12-19 09:00 (+1d) |  |  |  |  |
| 243 | **测试介入** | 2019-12-18 14:00 → 2019-12-19 09:00 (+1d) | 2019-12-25 14:00 → 2019-12-26 09:00 (+1d) |  | 16d → 14d |  |  |
| 244 | 封闭测试 | 2019-12-18 14:00 → 2019-12-19 09:00 (+1d) | 2019-12-20 14:00 → 2019-12-23 09:00 (+3d) |  | 16d → 14d |  |  |
| 245 | bug修复回归测试 | 2019-12-20 14:00 → 2019-12-23 09:00 (+3d) | 2019-12-25 14:00 → 2019-12-26 09:00 (+1d) |  | 16d → 14d |  |  |
| 246 | **统一编码** | 2019-12-09 14:00 → 2019-11-28 14:00 (-11d) | 2020-01-07 09:00 → 2020-01-07 14:00 | 19.5d → 27d | 7d → 6.5d |  |  |
| 247 | **供应商商品匹对管理** | 2019-12-09 14:00 → 2019-11-28 14:00 (-11d) | 2019-12-26 14:00 → 2019-12-27 09:00 (+1d) | 13d → 20.5d | 9d → 13d |  |  |
| 248 | **后端设计** | 2019-12-09 14:00 → 2019-11-28 14:00 (-11d) | 2019-12-16 09:00 → 2019-12-05 14:00 (-11d) | 4.5d → 5d | 9d → 14.5d |  |  |
| 249 | 表结构设计（原有的商品匹对表改为商品匹对待审批表，新增商品匹对表和商品匹对历史记录表） | 2019-12-09 14:00 → 2019-11-28 14:00 (-11d) | 2019-12-11 14:00 → 2019-12-02 14:00 (-9d) |  | 9d → 14.5d |  |  |
| 250 | 接口详细设计 | 2019-12-12 09:00 → 2019-12-03 14:00 (-9d) | 2019-12-16 09:00 → 2019-12-05 14:00 (-11d) |  | 15.5d → 20.5d |  |  |
| 251 | **后端开发** | 2019-12-16 09:00 → 2019-12-05 14:00 (-11d) | 2019-12-25 14:00 → 2019-12-26 09:00 (+1d) | 7.5d → 14.5d | 15d → 13d |  |  |
| 252 | 原供应商商品匹对管理代码改造 | 2019-12-16 09:00 → 2019-12-05 14:00 (-11d) | 2019-12-18 09:00 → 2019-12-09 14:00 (-9d) |  | 15.5d → 20.5d |  |  |
| 253 | 待审批记录审批接口，审批时往审批历史记录表插入记录，审批通过时通过新增或更新商品匹对信息表 | 2019-12-18 14:00 → 2019-12-19 09:00 (+1d) | 2019-12-20 14:00 → 2019-12-23 09:00 (+3d) |  | 15.5d → 13.5d |  |  |
| 254 | 变更信息详情接口 | 2019-12-20 14:00 → 2019-12-23 09:00 (+3d) | 2019-12-23 14:00 → 2019-12-24 09:00 (+1d) |  | 15.5d → 13.5d |  |  |
| 255 | 审批流详情接口（审批的所有过程记录） | 2019-12-23 14:00 → 2019-12-24 09:00 (+1d) | 2019-12-24 14:00 → 2019-12-25 09:00 (+1d) |  | 15.5d → 13.5d |  |  |
| 256 | 匹对任务改造：处于“未匹对”状态的记录要可以自动重复匹对（例如先有供应商商品，后面才补充平台商品的，可以重新自动匹对，不需要生成新的匹对记录，只需要变更匹对状态） | 2019-12-18 14:00 → 2019-12-19 09:00 (+1d) | 2019-12-20 14:00 → 2019-12-23 09:00 (+3d) |  | 15d → 13d |  | resources 刘振兴 → 杨朝辉 |
| 257 | 手动匹对接口改造：已匹对但是审批不通过的记录可重新进行手动匹对，审批不通过后，操作栏显示“匹对”操作链接。重新匹对后，审批状态恢复为“待审批”状态，并可重新审批 | 2019-12-20 14:00 → 2019-12-23 09:00 (+3d) | 2019-12-23 14:00 → 2019-12-24 09:00 (+1d) |  | 15d → 13d |  | resources 刘振兴 → 杨朝辉 |
| 258 | 新增取消匹对接口：具有取消匹对权限的用户可取消商品的匹对记录，取消后该记录恢复“未匹对”状态并可重新匹对 | 2019-12-23 14:00 → 2019-12-24 09:00 (+1d) | 2019-12-25 14:00 → 2019-12-26 09:00 (+1d) |  | 15d → 13d |  | resources 刘振兴 → 杨朝辉 |
| 259 | **前端开发** | 2019-12-12 09:00 → 2019-12-03 14:00 (-9d) | 2019-12-13 14:00 → 2019-12-05 09:00 (-8d) |  | 24d → 27.5d |  |  |
| 260 | 变更记录审批界面开发 | 2019-12-12 09:00 → 2019-12-03 14:00 (-9d) | 2019-12-12 14:00 → 2019-12-04 09:00 (-8d) |  | 24d → 27.5d |  |  |
| 261 | 变更信息详情界面开发 | 2019-12-12 14:00 → 2019-12-04 09:00 (-8d) | 2019-12-13 09:00 → 2019-12-04 14:00 (-9d) |  | 24d → 27.5d |  |  |
| 262 | 审批流详情界面开发 | 2019-12-13 09:00 → 2019-12-04 14:00 (-9d) | 2019-12-13 14:00 → 2019-12-05 09:00 (-8d) |  | 24d → 27.5d |  |  |
| 263 | **前后端联调** | 2019-12-24 14:00 → 2019-12-25 09:00 (+1d) | 2019-12-26 14:00 → 2019-12-27 09:00 (+1d) |  | 15d → 13d |  |  |
| 264 | 待审批记录审批接口，审批时往审批历史记录表插入记录，审批通过时通过新增或更新商品匹对信息表 | 2019-12-24 14:00 → 2019-12-25 09:00 (+1d) | 2019-12-25 09:00 → 2019-12-25 14:00 |  | 15.5d → 13.5d |  |  |
| 265 | 变更信息详情接口（变更前后记录对比） | 2019-12-25 09:00 → 2019-12-25 14:00 | 2019-12-25 14:00 → 2019-12-26 09:00 (+1d) |  | 15.5d → 13.5d |  |  |
| 266 | 审批流详情接口（审批的所有过程记录） | 2019-12-25 14:00 → 2019-12-26 09:00 (+1d) | 2019-12-26 09:00 → 2019-12-26 14:00 |  | 15.5d → 13.5d |  |  |
| 267 | 手动匹对接口改造：已匹对但是审批不通过的记录可重新进行手动匹对，审批不通过后，操作栏显示“匹对”操作链接。重新匹对后，审批状态恢复为“待审批”状态，并可重新审批 | 2019-12-25 14:00 → 2019-12-26 09:00 (+1d) | 2019-12-26 09:00 → 2019-12-26 14:00 |  | 15d → 13d |  | resources 刘振兴 → 杨朝辉 |
| 268 | 新增取消匹对接口：具有取消匹对权限的用户可取消商品的匹对记录，取消后该记录恢复“未匹对”状态并可重新匹对 | 2019-12-26 09:00 → 2019-12-26 14:00 | 2019-12-26 14:00 → 2019-12-27 09:00 (+1d) |  | 15d → 13d |  | resources 刘振兴 → 杨朝辉 |
| 269 | **医院商品匹对管理** | 2019-12-11 14:00 → 2019-12-02 14:00 (-9d) | 2019-12-27 09:00 → 2019-12-27 14:00 | 11.5d → 19d | 5d → 12.5d |  |  |
| 270 | **后端设计** | 2019-12-11 14:00 → 2019-12-02 14:00 (-9d) | 2019-12-23 14:00 → 2019-12-12 14:00 (-11d) |  | 9d → 14.5d |  |  |
| 271 | 接口详细设计 | 2019-12-11 14:00 → 2019-12-02 14:00 (-9d) | 2019-12-23 14:00 → 2019-12-12 14:00 (-11d) |  | 9d → 14.5d |  |  |
| 272 | **后端开发** | 2019-12-18 09:00 → 2019-12-09 14:00 (-9d) |  | 6d → 12.5d | 0.5d → 7.5d |  |  |
| 273 | 原医院商品匹对管理代码改造 | 2019-12-18 09:00 → 2019-12-09 14:00 (-9d) | 2019-12-20 09:00 → 2019-12-11 14:00 (-9d) |  | 15.5d → 20.5d |  |  |
| 274 | 待审批记录审批接口，审批时往审批历史记录表插入记录，审批通过时通过新增或更新商品匹对信息表 | 2019-12-18 14:00 → 2019-12-19 09:00 (+1d) | 2019-12-20 14:00 → 2019-12-23 09:00 (+3d) |  |  |  | resources 待定 → 郑海文 |
| 275 | 变更信息详情接口 | 2019-12-20 14:00 → 2019-12-23 09:00 (+3d) | 2019-12-23 14:00 → 2019-12-24 09:00 (+1d) |  |  |  | resources 待定 → 郑海文 |
| 276 | 审批流详情接口（审批的所有过程记录） | 2019-12-23 14:00 → 2019-12-24 09:00 (+1d) | 2019-12-24 14:00 → 2019-12-25 09:00 (+1d) |  |  |  | resources 待定 → 郑海文 |
| 277 | 匹对任务改造：处于“未匹对”状态的记录要可以自动重复匹对（例如先有供应商商品，后面才补充平台商品的，可以重新自动匹对，不需要生成新的匹对记录，只需要变更匹对状态） | 2019-12-20 09:00 → 2019-12-11 14:00 (-9d) | 2019-12-24 09:00 → 2019-12-13 14:00 (-11d) |  | 15.5d → 20.5d |  |  |
| 278 | 手动匹对接口改造：已匹对但是审批不通过的记录可重新进行手动匹对，审批不通过后，操作栏显示“匹对”操作链接。重新匹对后，审批状态恢复为“待审批”状态，并可重新审批 | 2019-12-24 14:00 → 2019-12-25 09:00 (+1d) | 2019-12-25 14:00 → 2019-12-26 09:00 (+1d) |  |  |  | resources 待定 → 郑海文 |
| 279 | 新增取消匹对接口：具有取消匹对权限的用户可取消商品的匹对记录，取消后该记录恢复“未匹对”状态并可重新匹对 | 2019-12-24 09:00 → 2019-12-13 14:00 (-11d) | 2019-12-26 09:00 → 2019-12-17 14:00 (-9d) |  | 15.5d → 20.5d |  |  |
| 280 | **前端开发** | 2019-12-18 14:00 → 2019-12-05 09:00 (-13d) | 2019-12-20 09:00 → 2019-12-06 14:00 (-14d) |  | 19.5d → 27.5d |  |  |
| 281 | 变更记录审批界面开发 | 2019-12-18 14:00 → 2019-12-05 09:00 (-13d) | 2019-12-19 09:00 → 2019-12-05 14:00 (-14d) |  | 19.5d → 27.5d | 242 → 262 | resources 卢毅 → 莫世坚 |
| 282 | 变更信息详情界面开发 | 2019-12-19 09:00 → 2019-12-05 14:00 (-14d) | 2019-12-19 14:00 → 2019-12-06 09:00 (-13d) |  | 19.5d → 27.5d |  | resources 卢毅 → 莫世坚 |
| 283 | 审批流详情界面开发 | 2019-12-19 14:00 → 2019-12-06 09:00 (-13d) | 2019-12-20 09:00 → 2019-12-06 14:00 (-14d) |  | 19.5d → 27.5d |  | resources 卢毅 → 莫世坚 |
| 284 | **前后端联调** | 2019-12-25 14:00 → 2019-12-26 09:00 (+1d) | 2019-12-27 09:00 → 2019-12-27 14:00 |  |  |  |  |
| 285 | 待审批记录审批接口，审批时往审批历史记录表插入记录，审批通过时通过新增或更新商品匹对信息表 | 2019-12-25 14:00 → 2019-12-26 09:00 (+1d) | 2019-12-26 09:00 → 2019-12-26 14:00 |  | 14.5d → 12.5d |  | resources 待定 → 郑海文 |
| 286 | 变更信息详情接口（变更前后记录对比） | 2019-12-26 09:00 → 2019-12-26 14:00 | 2019-12-26 14:00 → 2019-12-27 09:00 (+1d) |  | 14.5d → 12.5d |  | resources 待定 → 郑海文 |
| 287 | 审批流详情接口（审批的所有过程记录） | 2019-12-26 14:00 → 2019-12-27 09:00 (+1d) | 2019-12-27 09:00 → 2019-12-27 14:00 |  | 14.5d → 12.5d |  | resources 待定 → 郑海文 |
| 288 | 手动匹对接口改造：已匹对但是审批不通过的记录可重新进行手动匹对，审批不通过后，操作栏显示“匹对”操作链接。重新匹对后，审批状态恢复为“待审批”状态，并可重新审批 | 2019-12-25 14:00 → 2019-12-26 09:00 (+1d) | 2019-12-26 14:00 → 2019-12-27 09:00 (+1d) |  |  |  |  |
| 289 | 新增取消匹对接口：具有取消匹对权限的用户可取消商品的匹对记录，取消后该记录恢复“未匹对”状态并可重新匹对 | 2019-12-26 14:00 → 2019-12-27 09:00 (+1d) | 2019-12-27 09:00 → 2019-12-27 14:00 |  |  |  |  |
| 290 | 研发人员自测 | 2019-12-27 09:00 → 2019-12-27 14:00 | 2019-12-31 09:00 → 2019-12-31 14:00 |  | 0d → 1.5d |  |  |
| 291 | **测试介入** | 2019-12-31 09:00 → 2019-12-31 14:00 | 2020-01-07 09:00 → 2020-01-07 14:00 |  | 8.5d → 6.5d |  |  |
| 292 | 封闭测试 | 2019-12-31 09:00 → 2019-12-31 14:00 | 2020-01-03 09:00 → 2020-01-03 14:00 |  | 8.5d → 6.5d |  |  |
| 293 | bug修复回归测试 | 2020-01-03 09:00 → 2020-01-03 14:00 | 2020-01-07 09:00 → 2020-01-07 14:00 |  | 8.5d → 6.5d |  |  |
| 294 | **采购供货** | 2019-12-23 14:00 → 2019-12-12 14:00 (-11d) | 2020-01-14 09:00 → 2020-01-14 14:00 | 14.5d → 22d | 3.5d → 1.5d |  |  |
| 295 | **采购单管理** | 2019-12-23 14:00 → 2019-12-12 14:00 (-11d) | 2019-12-31 14:00 → 2020-01-06 09:00 (+6d) | 6d → 15.5d | 9d → 6.5d |  |  |
| 296 | **后端设计** | 2019-12-23 14:00 → 2019-12-12 14:00 (-11d) | 2019-12-24 14:00 → 2019-12-13 14:00 (-11d) |  | 9d → 14.5d |  |  |
| 297 | 接口详细设计 | 2019-12-23 14:00 → 2019-12-12 14:00 (-11d) | 2019-12-24 14:00 → 2019-12-13 14:00 (-11d) |  | 9d → 14.5d |  |  |
| 298 | **后端开发** | 2019-12-27 09:00 → 2019-12-31 14:00 (+4d) | 2019-12-31 09:00 → 2020-01-03 14:00 (+3d) |  | 9d → 6.5d |  |  |

| ID | Task | Start | Finish | Duration | Complete | Total float | Predecessors | Other |
| --- | --- | --- | --- | --- | --- | --- | --- | --- |
| 299 | 采购单批量导入接口 | 2019-12-27 09:00 → 2019-12-31 14:00 (+4d) | 2019-12-31 09:00 → 2020-01-03 14:00 (+3d) |  |  | 9d → 6.5d | 289 → 290 | resources 文超 → 杨迎 |
| 300 | **前后端联调** | 2019-12-31 09:00 → 2020-01-03 14:00 (+3d) | 2019-12-31 14:00 → 2020-01-06 09:00 (+6d) |  |  | 9d → 6.5d |  |  |
| 301 | 采购单批量导入接口 | 2019-12-31 09:00 → 2020-01-03 14:00 (+3d) | 2019-12-31 14:00 → 2020-01-06 09:00 (+6d) |  |  | 9d → 6.5d |  | resources 文超 → 杨迎 |
| 302 | **供货单管理** | 2019-12-24 14:00 → 2019-12-13 14:00 (-11d) |  | 8d → 15d |  | 4.5d → 7.5d |  |  |
| 303 | **后端设计** | 2019-12-24 14:00 → 2019-12-13 14:00 (-11d) | 2019-12-30 14:00 → 2019-12-19 14:00 (-11d) |  |  | 9d → 14.5d |  |  |
| 304 | 接口详细设计 | 2019-12-24 14:00 → 2019-12-13 14:00 (-11d) | 2019-12-30 14:00 → 2019-12-19 14:00 (-11d) |  |  | 9d → 14.5d |  |  |
| 305 | **后端开发** | 2019-12-31 09:00 → 2019-12-27 14:00 (-4d) |  | 2.5d → 4d |  |  |  |  |
| 306 | 分页列表查询接口改造（返回供应商名称字段） | 2019-12-31 09:00 → 2019-12-31 14:00 | 2019-12-31 14:00 → 2020-01-02 09:00 (+2d) |  |  | 0d → 1.5d |  | resources 待定 → 郑海文 |
| 307 | 供货单打印接口 | 2019-12-31 14:00 → 2019-12-27 14:00 (-4d) | 2020-01-03 14:00 → 2019-12-31 14:00 (-3d) |  |  | 9d → 0d | 301 → 289 |  |
| 308 | 一键生成标签接口 | 2019-12-31 09:00 → 2019-12-31 14:00 | 2020-01-03 09:00 → 2020-01-03 14:00 |  |  | 9.5d → 7.5d |  | resources 刘振兴 → 杨朝辉 |
| 309 | 供货单批量导出接口（支持条件查询） | 2019-12-31 14:00 → 2020-01-02 09:00 (+2d) | 2020-01-02 14:00 → 2020-01-03 09:00 (+1d) |  |  | 0d → 1.5d |  | resources 待定 → 郑海文 |
| 310 | **前后端联调** | 2020-01-02 14:00 → 2019-12-31 14:00 (-2d) |  | 2d → 3d |  |  |  |  |
| 311 | 分页列表查询接口改造（返回供应商名称字段） | 2020-01-02 14:00 → 2020-01-03 09:00 (+1d) | 2020-01-03 09:00 → 2020-01-03 14:00 |  |  | 0d → 1.5d |  | resources 待定 → 郑海文 |
| 312 | 供货单打印接口 | 2020-01-03 14:00 → 2019-12-31 14:00 (-3d) | 2020-01-06 14:00 → 2020-01-02 14:00 (-4d) |  |  | 9d → 0d |  |  |
| 313 | 一键生成标签接口 | 2020-01-03 09:00 → 2020-01-03 14:00 | 2020-01-06 09:00 → 2020-01-06 14:00 |  |  | 9.5d → 7.5d |  | resources 刘振兴 → 杨朝辉 |
| 314 | 供货单批量导出接口（支持条件查询） | 2020-01-03 09:00 → 2020-01-03 14:00 | 2020-01-03 14:00 → 2020-01-06 09:00 (+3d) |  |  | 0d → 1.5d |  | resources 待定 → 郑海文 |
| 315 | **标签管理** | 2019-12-30 14:00 → 2019-12-19 14:00 (-11d) | 2020-01-06 14:00 → 2020-01-07 14:00 (+1d) | 4d → 12d |  | 9d → 6.5d |  |  |
| 316 | **后端设计** | 2019-12-30 14:00 → 2019-12-19 14:00 (-11d) | 2020-01-06 14:00 → 2019-12-25 14:00 (-12d) |  |  | 9d → 14.5d |  |  |
| 317 | 打包标签自适应设计 | 2019-12-30 14:00 → 2019-12-19 14:00 (-11d) | 2020-01-06 14:00 → 2019-12-25 14:00 (-12d) |  |  | 9d → 14.5d |  |  |
| 318 | **后端开发** | 2020-01-03 09:00 → 2020-01-06 09:00 (+3d) | 2020-01-06 09:00 → 2020-01-07 09:00 (+1d) |  |  | 9d → 6.5d |  |  |
| 319 | 后端打印标签接口改造 | 2020-01-03 09:00 → 2020-01-06 09:00 (+3d) | 2020-01-06 09:00 → 2020-01-07 09:00 (+1d) |  |  | 9d → 6.5d | 292 → 301 |  |
| 320 | **前后端联调** | 2020-01-06 09:00 → 2020-01-07 09:00 (+1d) | 2020-01-06 14:00 → 2020-01-07 14:00 (+1d) |  |  | 9d → 6.5d |  |  |
| 321 | 后端打印标记接口改造 | 2020-01-06 09:00 → 2020-01-07 09:00 (+1d) | 2020-01-06 14:00 → 2020-01-07 14:00 (+1d) |  |  | 9d → 6.5d |  |  |
| 322 | **验收单管理** | 2020-01-03 14:00 → 2020-01-06 09:00 (+3d) | 2020-01-06 09:00 → 2020-01-06 14:00 |  |  | 0d → 1.5d |  |  |
| 323 | **后端开发** | 2020-01-03 14:00 → 2020-01-06 09:00 (+3d) | 2020-01-06 09:00 → 2020-01-06 14:00 |  |  | 0d → 1.5d |  |  |
| 324 | 验收单转换任务（从临时表到MCP业务表），“验收单号”字段值，如果医院有回传，则记录医院的验收单号，否则系统自动生成。 | 2020-01-03 14:00 → 2020-01-06 09:00 (+3d) | 2020-01-06 09:00 → 2020-01-06 14:00 |  |  | 0d → 1.5d |  | resources 待定 → 郑海文 |
| 327 | 研发人员自测 | 2020-01-06 09:00 → 2020-01-06 14:00 | 2020-01-08 09:00 → 2020-01-08 14:00 |  |  | 3.5d → 1.5d |  |  |
| 328 | **测试介入** | 2020-01-08 09:00 → 2020-01-08 14:00 | 2020-01-14 09:00 → 2020-01-14 14:00 |  |  | 3.5d → 1.5d |  |  |
| 329 | 封闭测试 | 2020-01-08 09:00 → 2020-01-08 14:00 | 2020-01-10 09:00 → 2020-01-10 14:00 |  |  | 3.5d → 1.5d |  |  |
| 330 | bug修复回归测试 | 2020-01-10 09:00 → 2020-01-10 14:00 | 2020-01-14 09:00 → 2020-01-14 14:00 |  |  | 3.5d → 1.5d |  |  |
| 371 | **退货管理** | 2019-10-12 14:00 A | 2019-11-11 14:00 → 2019-11-08 14:00 (-3d) | 21d → 20d | 0% → 93% | 9d → 0d |  |  |
| 404 | **退货单管理** | 2019-10-12 14:00 A | 2019-11-11 14:00 → 2019-11-08 14:00 (-3d) | 21d → 20d | 0% → 93% | 9d → 0d |  |  |
| 405 | **后端设计** | 2019-10-12 14:00 A | 2019-10-23 14:00 A |  | 0% → 100% | 9d → none |  |  |
| 406 | 表结构设计 | 2019-10-12 14:00 A | 2019-10-14 14:00 A |  | 0% → 100% | 9d → none |  |  |
| 407 | 接口详细设计 | 2019-10-14 14:00 A | 2019-10-22 14:00 A |  | 0% → 100% | 9d → none |  |  |
| 408 | **ETL数据同步设计** | 2019-10-22 14:00 A | 2019-10-23 14:00 A |  | 0% → 100% | 9d → none |  |  |
| 409 | 退货单数据上传（ETL数据同步，从DSC到MCP临时表） | 2019-10-22 14:00 A | 2019-10-23 14:00 A |  | 0% → 100% | 9d → none |  |  |
| 410 | **后端开发** | 2019-10-24 14:00 → 2019-10-23 14:00 A (-1d) | 2019-10-31 14:00 → 2019-10-30 14:00 A (-1d) |  | 0% → 100% | 0d → none |  |  |
| 411 | 主单分页列表查询接口 | 2019-10-24 14:00 → 2019-10-23 14:00 A (-1d) | 2019-10-25 09:00 → 2019-10-24 09:00 A (-1d) |  | 0% → 100% | 0d → none |  |  |
| 412 | 细单分页列表查询接口 | 2019-10-25 09:00 → 2019-10-24 09:00 A (-1d) | 2019-10-25 14:00 → 2019-10-24 14:00 A (-1d) |  | 0% → 100% | 0d → none |  |  |
| 413 | 主细单数据批量导入接口 | 2019-10-25 14:00 → 2019-10-24 14:00 A (-1d) | 2019-10-29 14:00 → 2019-10-28 14:00 A (-1d) |  | 0% → 100% | 0d → none |  |  |
| 414 | 主细单数据批量导出接口（支持条件查询） | 2019-10-29 14:00 → 2019-10-28 14:00 A (-1d) | 2019-10-30 14:00 → 2019-10-29 14:00 A (-1d) |  | 0% → 100% | 0d → none |  |  |
| 415 | 退货单新增接口 | 2019-10-24 14:00 → 2019-10-23 14:00 A (-1d) | 2019-10-25 14:00 → 2019-10-24 14:00 A (-1d) |  | 0% → 100% | 54d → none |  |  |
| 416 | 退货单编辑接口 | 2019-10-25 14:00 → 2019-10-24 14:00 A (-1d) | 2019-10-28 14:00 → 2019-10-25 14:00 A (-3d) |  | 0% → 100% | 54d → none |  |  |
| 417 | 退货单删除接口 | 2019-10-28 14:00 → 2019-10-25 14:00 A (-3d) | 2019-10-29 09:00 → 2019-10-28 09:00 A (-1d) |  | 0% → 100% | 54d → none |  |  |
| 418 | 退货单转换任务（从临时表到MCP业务表） | 2019-10-30 14:00 → 2019-10-29 14:00 A (-1d) | 2019-10-31 14:00 → 2019-10-30 14:00 A (-1d) |  | 0% → 100% | 0d → none |  |  |
| 419 | **前端开发** | 2019-10-24 14:00 → 2019-10-23 14:00 A (-1d) | 2019-10-28 09:00 → 2019-10-25 09:00 A (-3d) |  | 0% → 100% | 58.5d → none |  |  |
| 420 | 退货单分页列表界面 | 2019-10-24 14:00 → 2019-10-23 14:00 A (-1d) | 2019-10-25 09:00 → 2019-10-24 09:00 A (-1d) |  | 0% → 100% | 58.5d → none |  |  |
| 421 | 退货单新增界面 | 2019-10-25 09:00 → 2019-10-24 09:00 A (-1d) | 2019-10-25 14:00 → 2019-10-24 14:00 A (-1d) |  | 0% → 100% | 58.5d → none |  |  |
| 422 | 退货单编辑界面 | 2019-10-25 14:00 → 2019-10-24 14:00 A (-1d) | 2019-10-28 09:00 → 2019-10-25 09:00 A (-3d) |  | 0% → 100% | 58.5d → none |  |  |
| 423 | **前后端联调** | 2019-10-29 09:00 → 2019-10-28 09:00 A (-1d) | 2019-11-01 14:00 → 2019-10-31 14:00 A (-1d) |  | 0% → 100% | 54d → none |  |  |
| 424 | 主单分页列表查询接口 | 2019-10-29 09:00 → 2019-10-28 09:00 A (-1d) | 2019-10-29 14:00 → 2019-10-28 14:00 A (-1d) |  | 0% → 100% | 54d → none |  |  |
| 425 | 细单分页列表查询接口 | 2019-10-29 14:00 → 2019-10-28 14:00 A (-1d) | 2019-10-30 09:00 → 2019-10-29 09:00 A (-1d) |  | 0% → 100% | 54d → none |  |  |
| 426 | 主细单数据批量导入接口 | 2019-10-30 09:00 → 2019-10-29 09:00 A (-1d) | 2019-10-30 14:00 → 2019-10-29 14:00 A (-1d) |  | 0% → 100% | 54d → none |  |  |
| 427 | 主细单数据批量导出接口（支持条件查询） | 2019-10-30 14:00 → 2019-10-29 14:00 A (-1d) | 2019-10-31 09:00 → 2019-10-30 09:00 A (-1d) |  | 0% → 100% | 54d → none |  |  |
| 428 | 退货单新增接口 | 2019-10-31 09:00 → 2019-10-30 09:00 A (-1d) | 2019-10-31 14:00 → 2019-10-30 14:00 A (-1d) |  | 0% → 100% | 54d → none |  |  |
| 429 | 退货单编辑接口 | 2019-10-31 14:00 → 2019-10-30 14:00 A (-1d) | 2019-11-01 09:00 → 2019-10-31 09:00 A (-1d) |  | 0% → 100% | 54d → none |  |  |
| 430 | 退货单删除接口 | 2019-11-01 09:00 → 2019-10-31 09:00 A (-1d) | 2019-11-01 14:00 → 2019-10-31 14:00 A (-1d) |  | 0% → 100% | 54d → none |  |  |
| 431 | **外部系统联调** | 2019-10-31 14:00 → 2019-10-30 14:00 A (-1d) | 2019-11-01 14:00 → 2019-10-31 14:00 A (-1d) |  | 0% → 100% | 0d → none |  |  |
| 432 | 退货单数据上传（ETL数据同步，从DSC到MCP临时表） | 2019-10-31 14:00 → 2019-10-30 14:00 A (-1d) | 2019-11-01 14:00 → 2019-10-31 14:00 A (-1d) |  | 0% → 100% | 0d → none |  |  |
| 433 | 研发人员自测 | 2019-11-01 14:00 → 2019-10-31 14:00 A (-1d) | 2019-11-05 14:00 → 2019-11-04 14:00 A (-1d) |  | 0% → 100% | 0d → none |  |  |
| 434 | **测试介入** | 2019-11-05 14:00 → 2019-11-04 14:00 A (-1d) | 2019-11-11 14:00 → 2019-11-08 14:00 (-3d) |  | 0% → 50% |  |  |  |
| 435 | 封闭测试 | 2019-11-05 14:00 → 2019-11-04 14:00 A (-1d) | 2019-11-07 14:00 → 2019-11-06 14:00 A (-1d) |  | 0% → 100% | 0d → none |  |  |
| 436 | bug修复回归测试 | 2019-11-07 14:00 → 2019-11-06 14:00 (-1d) | 2019-11-11 14:00 → 2019-11-08 14:00 (-3d) |  |  |  |  |  |
| 564 | **SPD数据同步对接** | 2020-01-06 09:00 → 2020-01-02 14:00 (-4d) | 2020-01-10 14:00 → 2020-01-10 09:00 | 4.5d → 5.5d |  |  |  |  |
| 565 | **后端开发** | 2020-01-06 09:00 → 2020-01-02 14:00 (-4d) |  | 2.5d → 4d |  |  |  |  |
| 566 | 医院信息转换任务联调（从临时表到MCP业务表） | 2020-01-06 09:00 → 2020-01-02 14:00 (-4d) | 2020-01-06 14:00 → 2020-01-03 09:00 (-3d) |  |  |  | 324 → 312 |  |
| 567 | 医院供应商关系转换任务（从临时表到MCP业务表） | 2020-01-06 14:00 → 2020-01-03 09:00 (-3d) | 2020-01-07 09:00 → 2020-01-03 14:00 (-4d) |  |  |  |  |  |
| 568 | 医院库房转换任务（从临时表到MCP业务表） | 2020-01-07 09:00 → 2020-01-03 14:00 (-4d) | 2020-01-07 14:00 → 2020-01-06 09:00 (-1d) |  |  |  |  |  |
| 569 | 供应商商品转换任务（从MCP业务表到临时表） | 2020-01-07 14:00 → 2020-01-06 09:00 (-1d) | 2020-01-08 09:00 → 2020-01-06 14:00 (-2d) |  |  |  |  |  |

| ID | Task | Start | Finish | Duration | Total float | Other |
| --- | --- | --- | --- | --- | --- | --- |
| 570 | 医院商品转换任务（从临时表到MCP业务表） | 2020-01-08 09:00 → 2020-01-06 14:00 (-2d) | 2020-01-08 14:00 → 2020-01-07 09:00 (-1d) |  |  |  |
| 571 | 采购单（主细单）转换任务（从临时到MCP业务表） | 2020-01-06 09:00 → 2020-01-06 14:00 | 2020-01-06 14:00 → 2020-01-07 09:00 (+1d) |  | 6d → 4d | resources 刘振兴 → 杨朝辉 |
| 572 | 收货单（主细单）转换任务（从MCP业务表到临时表） | 2020-01-06 14:00 → 2020-01-07 09:00 (+1d) | 2020-01-07 09:00 → 2020-01-07 14:00 |  | 6d → 4d | resources 刘振兴 → 杨朝辉 |
| 573 | 验收单（主细单）转换任务（从临时表到MCP业务表） | 2020-01-07 09:00 → 2020-01-07 14:00 | 2020-01-07 14:00 → 2020-01-08 09:00 (+1d) |  | 6d → 4d | resources 刘振兴 → 杨朝辉 |
| 574 | 退货单（主细单）转换任务（从临时表到MCP业务表） | 2020-01-07 14:00 → 2020-01-08 09:00 (+1d) | 2020-01-08 09:00 → 2020-01-08 14:00 |  | 6d → 4d | resources 刘振兴 → 杨朝辉 |
| 575 | **外部系统联调** | 2020-01-08 09:00 → 2020-01-07 09:00 (-1d) | 2020-01-10 14:00 → 2020-01-10 09:00 | 2.5d → 3d | 0.5d → 0d |  |
| 576 | 医院信息数据上传（ETL数据同步，从SPD到MCP临时表） | 2020-01-08 09:00 → 2020-01-08 14:00 | 2020-01-08 14:00 → 2020-01-09 09:00 (+1d) |  | 6d → 4d |  |
| 577 | 医院供应商关系数据上传（ETL数据同步，从SPD到MCP临时表） | 2020-01-08 14:00 → 2020-01-09 09:00 (+1d) | 2020-01-09 09:00 → 2020-01-09 14:00 |  | 6d → 4d |  |
| 578 | 医院库房数据上传（ETL数据同步，从SPD到MCP临时表） | 2020-01-09 09:00 → 2020-01-09 14:00 | 2020-01-09 14:00 → 2020-01-10 09:00 (+1d) |  | 6d → 4d |  |
| 579 | 供应商商品数据下发（ETL数据同步，从MCP临时表到SPD） | 2020-01-08 09:00 → 2020-01-08 14:00 | 2020-01-08 14:00 → 2020-01-09 09:00 (+1d) |  | 6d → 4d | resources 刘振兴 → 杨朝辉 |
| 580 | 医院商品数据上传（ETL数据同步，从SPD到MCP临时表） | 2020-01-08 14:00 → 2020-01-09 09:00 (+1d) | 2020-01-09 09:00 → 2020-01-09 14:00 |  | 6d → 4d | resources 刘振兴 → 杨朝辉 |
| 581 | 采购主单数据上传（ETL数据同步，从SPD到MCP临时表） | 2020-01-09 09:00 → 2020-01-09 14:00 | 2020-01-09 14:00 → 2020-01-10 09:00 (+1d) |  | 6d → 4d | resources 刘振兴 → 杨朝辉 |
| 582 | 采购细单数据上传（ETL数据同步，从SPD到MCP临时表） | 2020-01-08 09:00 → 2020-01-08 14:00 | 2020-01-08 14:00 → 2020-01-09 09:00 (+1d) |  | 6d → 4d | resources 待定 → 郑海文 |
| 583 | 收货主单数据下发（ETL数据同步，从MCP临时表到SPD） | 2020-01-08 14:00 → 2020-01-09 09:00 (+1d) | 2020-01-09 09:00 → 2020-01-09 14:00 |  | 6d → 4d | resources 待定 → 郑海文 |
| 584 | 收货细单数据下发（ETL数据同步，从MCP临时表到SPD） | 2020-01-09 09:00 → 2020-01-09 14:00 | 2020-01-09 14:00 → 2020-01-10 09:00 (+1d) |  | 6d → 4d | resources 待定 → 郑海文 |
| 585 | 验收主单数据上传（ETL数据同步，从SPD到MCP临时表） | 2020-01-08 14:00 → 2020-01-07 09:00 (-1d) | 2020-01-09 09:00 → 2020-01-07 14:00 (-2d) |  |  |  |
| 586 | 验收细单数据上传（ETL数据同步，从SPD到MCP临时表） | 2020-01-09 09:00 → 2020-01-07 14:00 (-2d) | 2020-01-09 14:00 → 2020-01-08 09:00 (-1d) |  |  |  |
| 587 | 退货主单数据上传（ETL数据同步，从SPD到MCP临时表） | 2020-01-09 14:00 → 2020-01-08 09:00 (-1d) | 2020-01-10 09:00 → 2020-01-08 14:00 (-2d) |  |  |  |
| 588 | 退货细单数据上传（ETL数据同步，从SPD到MCP临时表） | 2020-01-10 09:00 → 2020-01-08 14:00 (-2d) | 2020-01-10 14:00 → 2020-01-09 09:00 (-1d) |  |  |  |
| 589 | **系统集成测试** | 2020-01-10 14:00 → 2020-01-09 09:00 (-1d) | 2020-01-17 14:00 → 2020-01-16 09:00 (-1d) |  |  |  |
| 590 | 封闭测试 | 2020-01-10 14:00 → 2020-01-09 09:00 (-1d) | 2020-01-15 14:00 → 2020-01-14 09:00 (-1d) |  |  |  |
| 591 | bug修复回归测试 | 2020-01-15 14:00 → 2020-01-14 09:00 (-1d) | 2020-01-17 14:00 → 2020-01-16 09:00 (-1d) |  |  |  |
